# Ethylene Plant Expansion - Civil, Steel Structure & Furnaces Works

Schedule from MS Project, 2021-10-22 to 2022-07-19, status date 2021-10-22, A marks actual dates.

## Calendars

- Standard: Mon-Sun 08:00-12:00, 13:00-17:00.

## Schedule

| ID | WBS | Task | Duration | Start | Finish | Predecessors | Complete | Remaining | Baseline start | Baseline finish | Baseline duration | Total slack | per | Text2 | Persian Start | Persian Finish |
| --- | --- | --- | --- | --- | --- | --- | --- | --- | --- | --- | --- | --- | --- | --- | --- | --- |
| 1 | 1 | START | 1d | 2021-10-22 A | 2021-10-22 A |  | 100% |  | 2021-05-22 | 2021-05-22 | 0d |  | 00/07/30 | 00/07/30 | 100/7/30 | 100/7/30 |
| 2 | 2 | Mobilization | 15d | 2021-10-23 A | 2021-11-06 A | 1 | 100% |  | 2021-05-22 | 2021-06-05 | 15d |  | 00/08/01 | 00/08/15 | 100/8/1 | 100/8/15 |
| 3 | 3 | **Cracking Furnaces Erection** | 270.2d | 2021-10-22 A | 2022-07-19 |  | 27% | 196.87d | 2021-05-22 | 2022-02-15 | 270d | 0d | 00/07/30 | 01/04/28 | 100/7/30 | 101/4/28 |
| 4 | 3.1 | **F-110** | 270.2d | 2021-10-22 A | 2022-07-19 |  | 32% | 184.04d | 2021-05-22 | 2022-02-13 | 268d | 0d | 00/07/30 | 01/04/26 | 100/7/30 | 101/4/28 |
| 5 | 3.1.1 | **Furnace Structural Steel (Plate & Steel)** | 205.2d | 2021-10-22 A | 2022-05-15 |  | 55% | 92.56d | 2021-05-22 | 2022-02-13 | 268d | 65d | 00/07/30 | 01/04/26 | 100/7/30 | 101/2/25 |
| 6 | 3.1.1.1 | **Radiant Plate Sections** | 205.2d | 2021-10-22 A | 2022-05-15 |  | 86% | 29.46d | 2021-05-22 | 2022-01-09 | 233d | 63d | 00/07/30 | 01/03/22 | 100/7/30 | 101/2/25 |
| 7 | 3.1.1.1.1 | **1A Radiant Floor Panels** | 11.92d | 2021-10-22 A | 2021-11-02 A |  | 100% |  | 2021-05-22 | 2021-05-31 | 10d |  | 00/07/30 | 00/08/11 | 100/7/30 | 100/8/11 |
| 8 | 3.1.1.1.1.1 | Installation | 2.84d | 2021-10-22 A | 2021-10-24 A | 50SS | 100% |  | 2021-05-22 | 2021-05-23 | 2d |  | 00/07/30 | 00/08/02 | 100/7/30 | 100/8/2 |
| 9 | 3.1.1.1.1.2 | Full Bolt & Tightening | 4.52d | 2021-10-24 A | 2021-10-29 A | 8 | 100% |  | 2021-05-24 | 2021-05-27 | 4d |  | 00/08/02 | 00/08/07 | 100/8/2 | 100/8/7 |
| 10 | 3.1.1.1.1.3 | Touch Up | 2.36d | 2021-10-29 A | 2021-10-31 A | 9 | 100% |  | 2021-05-28 | 2021-05-29 | 2d |  | 00/08/07 | 00/08/09 | 100/8/7 | 100/8/9 |
| 11 | 3.1.1.1.1.4 | Certificate | 2.2d | 2021-10-31 A | 2021-11-02 A | 10 | 100% |  | 2021-05-30 | 2021-05-31 | 2d |  | 00/08/09 | 00/08/11 | 100/8/9 | 100/8/11 |
| 12 | 3.1.1.1.2 | **1B Radiant Side Wall Panels Axis B+F(Outside)** | 46.2d | 2021-10-22 A | 2021-12-07 A |  | 100% |  | 2021-05-22 | 2021-07-06 | 46d |  | 00/07/30 | 00/09/16 | 100/7/30 | 100/9/16 |
| 13 | 3.1.1.1.2.1 | Chipping & Padding | 10.2d | 2021-10-22 A | 2021-11-01 A | 50SS | 100% |  | 2021-05-22 | 2021-05-31 | 10d |  | 00/07/30 | 00/08/10 | 100/7/30 | 100/8/10 |
| 14 | 3.1.1.1.2.2 | Installation | 14d | 2021-11-01 A | 2021-11-15 A | 13 | 100% |  | 2021-06-01 | 2021-06-14 | 14d |  | 00/08/10 | 00/08/24 | 100/8/10 | 100/8/24 |
| 15 | 3.1.1.1.2.3 | Leveling & Plumbness | 4d | 2021-11-15 A | 2021-11-19 A | 14 | 100% |  | 2021-06-15 | 2021-06-18 | 4d |  | 00/08/24 | 00/08/28 | 100/8/24 | 100/8/28 |
| 16 | 3.1.1.1.2.4 | Full Bolt & Tightening | 6d | 2021-11-19 A | 2021-11-25 A | 15 | 100% |  | 2021-06-19 | 2021-06-24 | 6d |  | 00/08/28 | 00/09/04 | 100/8/28 | 100/9/4 |
| 17 | 3.1.1.1.2.5 | Grouting | 4d | 2021-11-25 A | 2021-11-29 A | 16 | 100% |  | 2021-06-25 | 2021-06-28 | 4d |  | 00/09/04 | 00/09/08 | 100/9/4 | 100/9/8 |
| 18 | 3.1.1.1.2.6 | Touch Up | 4d | 2021-11-29 A | 2021-12-03 A | 17 | 100% |  | 2021-06-29 | 2021-07-02 | 4d |  | 00/09/08 | 00/09/12 | 100/9/8 | 100/9/12 |
| 19 | 3.1.1.1.2.7 | Certificate | 4d | 2021-12-03 A | 2021-12-07 A | 18 | 100% |  | 2021-07-03 | 2021-07-06 | 4d |  | 00/09/12 | 00/09/16 | 100/9/12 | 100/9/16 |
| 20 | 3.1.1.1.3 | **1C Radiant Side Wall Panels Axis C+E(Inside)** | 46.2d | 2021-10-22 A | 2021-12-07 A |  | 100% |  | 2021-05-22 | 2021-07-06 | 46d |  | 00/07/30 | 00/09/16 | 100/7/30 | 100/9/16 |
| 21 | 3.1.1.1.3.1 | Chipping & Padding | 10.2d | 2021-10-22 A | 2021-11-01 A | 50SS | 100% |  | 2021-05-22 | 2021-05-31 | 10d |  | 00/07/30 | 00/08/10 | 100/7/30 | 100/8/10 |
| 22 | 3.1.1.1.3.2 | Installation | 14d | 2021-11-01 A | 2021-11-15 A | 21 | 100% |  | 2021-06-01 | 2021-06-14 | 14d |  | 00/08/10 | 00/08/24 | 100/8/10 | 100/8/24 |
| 23 | 3.1.1.1.3.3 | Leveling & Plumbness | 4d | 2021-11-15 A | 2021-11-19 A | 22 | 100% |  | 2021-06-15 | 2021-06-18 | 4d |  | 00/08/24 | 00/08/28 | 100/8/24 | 100/8/28 |
| 24 | 3.1.1.1.3.4 | Full Bolt & Tightening | 6d | 2021-11-19 A | 2021-11-25 A | 23 | 100% |  | 2021-06-19 | 2021-06-24 | 6d |  | 00/08/28 | 00/09/04 | 100/8/28 | 100/9/4 |
| 25 | 3.1.1.1.3.5 | Grouting | 4d | 2021-11-25 A | 2021-11-29 A | 24 | 100% |  | 2021-06-25 | 2021-06-28 | 4d |  | 00/09/04 | 00/09/08 | 100/9/4 | 100/9/8 |
| 26 | 3.1.1.1.3.6 | Touch Up | 4d | 2021-11-29 A | 2021-12-03 A | 25 | 100% |  | 2021-06-29 | 2021-07-02 | 4d |  | 00/09/08 | 00/09/12 | 100/9/8 | 100/9/12 |
| 27 | 3.1.1.1.3.7 | Certificate | 4d | 2021-12-03 A | 2021-12-07 A | 26 | 100% |  | 2021-07-03 | 2021-07-06 | 4d |  | 00/09/12 | 00/09/16 | 100/9/12 | 100/9/16 |

| ID | WBS | Task | Duration | Start | Finish | Predecessors | Complete | Remaining | Baseline start | Baseline finish | Baseline duration | Total slack | Free slack | per | Text2 | Persian Start | Persian Finish |
| --- | --- | --- | --- | --- | --- | --- | --- | --- | --- | --- | --- | --- | --- | --- | --- | --- | --- |
| 28 | 3.1.1.1.4 | **1D Radiant End wall Panels** | 20.56d | 2021-10-22 A | 2021-11-11 |  | 90% | 2.06d | 2021-05-22 | 2021-06-10 | 20d | 32.84d |  | 00/07/30 | 00/08/20 | 100/7/30 | 100/8/20 |
| 29 | 3.1.1.1.4.1 | Installation | 6.52d | 2021-10-22 A | 2021-10-28 | 50SS | 90% | 0.65d | 2021-05-22 | 2021-05-27 | 6d | 5.44d | 0d | 00/07/30 | 00/08/06 | 100/7/30 | 100/8/6 |
| 30 | 3.1.1.1.4.2 | Full Bolt & Tightening | 6.04d | 2021-10-28 A | 2021-11-03 | 29 | 90% | 0.6d | 2021-05-28 | 2021-06-02 | 6d | 3.6d | 0d | 00/08/06 | 00/08/12 | 100/8/6 | 100/8/12 |
| 31 | 3.1.1.1.4.3 | Touch Up | 4d | 2021-11-03 A | 2021-11-07 | 30 | 90% | 0.4d | 2021-06-03 | 2021-06-06 | 4d | 3.6d | 0d | 00/08/12 | 00/08/16 | 100/8/12 | 100/8/16 |
| 32 | 3.1.1.1.4.4 | Certificate | 4d | 2021-11-07 A | 2021-11-11 | 31 | 90% | 0.4d | 2021-06-07 | 2021-06-10 | 4d | 32.84d | 25.64d | 00/08/16 | 00/08/20 | 100/8/16 | 100/8/20 |
| 33 | 3.1.1.1.5 | **1E Radiant Roof Panels** | 22d | 2021-12-07 A | 2021-12-29 |  | 90% | 2.2d | 2021-07-07 | 2021-07-28 | 22d | 200d |  | 00/09/16 | 00/10/08 | 100/9/16 | 100/10/8 |
| 34 | 3.1.1.1.5.1 | Installation | 8d | 2021-12-07 A | 2021-12-15 | 56, 11, 19, 27, 32 | 90% | 0.8d | 2021-07-07 | 2021-07-14 | 8d | 5.4d | 0d | 00/09/16 | 00/09/24 | 100/9/16 | 100/9/24 |
| 35 | 3.1.1.1.5.2 | Full Bolt & Tightening | 6d | 2021-12-15 A | 2021-12-21 | 34 | 90% | 0.6d | 2021-07-15 | 2021-07-20 | 6d | 5.4d | 0d | 00/09/24 | 00/09/30 | 100/9/24 | 100/9/30 |
| 36 | 3.1.1.1.5.3 | Touch Up | 6d | 2021-12-21 A | 2021-12-27 | 35 | 90% | 0.6d | 2021-07-21 | 2021-07-26 | 6d | 1.8d | 0d | 00/09/30 | 00/10/06 | 100/9/30 | 100/10/6 |
| 37 | 3.1.1.1.5.4 | Certificate | 2d | 2021-12-27 A | 2021-12-29 | 36 | 90% | 0.2d | 2021-07-27 | 2021-07-28 | 2d | 200d | 137d | 00/10/06 | 00/10/08 | 100/10/6 | 100/10/8 |
| 38 | 3.1.1.1.6 | **1F Radiant Roof Shadow Boxes** | 22d | 2021-11-11 | 2021-12-02 |  |  |  | 2021-12-19 | 2022-01-09 | 22d | 216.2d |  | 01/02/31 | 01/03/22 | 100/8/20 | 100/9/11 |
| 39 | 3.1.1.1.6.1 | Installation | 8d | 2021-11-11 | 2021-11-18 | 188 |  |  | 2021-12-19 | 2021-12-26 | 8d | 216.2d | 0d | 01/02/31 | 01/03/08 | 100/8/20 | 100/8/27 |
| 40 | 3.1.1.1.6.2 | Full Bolt & Tightening | 6d | 2021-11-19 | 2021-11-24 | 39 |  |  | 2021-12-27 | 2022-01-01 | 6d | 216.2d | 0d | 01/03/08 | 01/03/14 | 100/8/28 | 100/9/3 |
| 41 | 3.1.1.1.6.3 | Touch Up | 6d | 2021-11-25 | 2021-11-30 | 40 |  |  | 2022-01-02 | 2022-01-07 | 6d | 216.2d | 0d | 01/03/14 | 01/03/20 | 100/9/4 | 100/9/9 |
| 42 | 3.1.1.1.6.4 | Certificate | 2d | 2021-12-01 | 2021-12-02 | 41 |  |  | 2022-01-08 | 2022-01-09 | 2d | 216.2d | 0d | 01/03/20 | 01/03/22 | 100/9/10 | 100/9/11 |
| 43 | 3.1.1.1.7 | **1G Radiant Transition Roof to Convection** | 14d | 2022-05-01 A | 2022-05-15 A |  | 100% |  | 2021-11-29 | 2021-12-12 | 14d |  |  | 01/02/11 | 01/02/25 | 101/2/11 | 101/2/25 |
| 44 | 3.1.1.1.7.1 | Installation | 6d | 2022-05-01 A | 2022-05-07 A |  | 100% |  | 2021-11-29 | 2021-12-04 | 6d |  |  | 01/02/11 | 01/02/17 | 101/2/11 | 101/2/17 |
| 45 | 3.1.1.1.7.2 | Full Bolt & Tightening | 4d | 2022-05-07 A | 2022-05-11 A | 44 | 100% |  | 2021-12-05 | 2021-12-08 | 4d |  |  | 01/02/17 | 01/02/21 | 101/2/17 | 101/2/21 |
| 46 | 3.1.1.1.7.3 | Touch Up | 2d | 2022-05-11 A | 2022-05-13 A | 45 | 100% |  | 2021-12-09 | 2021-12-10 | 2d |  |  | 01/02/21 | 01/02/23 | 101/2/21 | 101/2/23 |
| 47 | 3.1.1.1.7.4 | Certificate | 2d | 2022-05-13 A | 2022-05-15 A | 46 | 100% |  | 2021-12-11 | 2021-12-12 | 2d |  |  | 01/02/23 | 01/02/25 | 101/2/23 | 101/2/25 |
| 48 | 3.1.1.2 | **Radiant Steel Sections** | 68.2d | 2021-10-22 A | 2021-12-29 |  | 89% | 7.27d | 2021-05-22 | 2021-07-28 | 68d | 202d |  | 00/07/30 | 00/10/08 | 100/7/30 | 100/10/8 |
| 49 | 3.1.1.2.1 | **2A1 Columns and Structural Steel** | 46.2d | 2021-10-22 A | 2021-12-07 A |  | 100% |  | 2021-05-22 | 2021-07-06 | 46d |  |  | 00/07/30 | 00/09/16 | 100/7/30 | 100/9/16 |
| 50 | 3.1.1.2.1.1 | Chipping & Padding | 10.2d | 2021-10-22 A | 2021-11-01 A |  | 100% |  | 2021-05-22 | 2021-05-31 | 10d |  |  | 00/07/30 | 00/08/10 | 100/7/30 | 100/8/10 |
| 51 | 3.1.1.2.1.2 | Installation | 14d | 2021-11-01 A | 2021-11-15 A | 50 | 100% |  | 2021-06-01 | 2021-06-14 | 14d |  |  | 00/08/10 | 00/08/24 | 100/8/10 | 100/8/24 |
| 52 | 3.1.1.2.1.3 | Leveling & Plumbness | 4d | 2021-11-15 A | 2021-11-19 A | 51 | 100% |  | 2021-06-15 | 2021-06-18 | 4d |  |  | 00/08/24 | 00/08/28 | 100/8/24 | 100/8/28 |
| 53 | 3.1.1.2.1.4 | Full Bolt & Tightening | 6d | 2021-11-19 A | 2021-11-25 A | 52 | 100% |  | 2021-06-19 | 2021-06-24 | 6d |  |  | 00/08/28 | 00/09/04 | 100/8/28 | 100/9/4 |
| 54 | 3.1.1.2.1.5 | Grouting | 4d | 2021-11-25 A | 2021-11-29 A | 53 | 100% |  | 2021-06-25 | 2021-06-28 | 4d |  |  | 00/09/04 | 00/09/08 | 100/9/4 | 100/9/8 |
| 55 | 3.1.1.2.1.6 | Touch Up | 4d | 2021-11-29 A | 2021-12-03 A | 54 | 100% |  | 2021-06-29 | 2021-07-02 | 4d |  |  | 00/09/08 | 00/09/12 | 100/9/8 | 100/9/12 |
| 56 | 3.1.1.2.1.7 | Certificate | 4d | 2021-12-03 A | 2021-12-07 A | 55 | 100% |  | 2021-07-03 | 2021-07-06 | 4d |  |  | 00/09/12 | 00/09/16 | 100/9/12 | 100/9/16 |

| ID | WBS | Task | Duration | Start | Finish | Predecessors | Complete | Baseline start | Baseline finish | Baseline duration | per | Text2 | Persian Start | Persian Finish |
| --- | --- | --- | --- | --- | --- | --- | --- | --- | --- | --- | --- | --- | --- | --- |
| 57 | 3.1.1.2.2 | **2A2 Platform** | 22d | 2021-12-07 A | 2021-12-29 A |  | 100% | 2021-07-07 | 2021-07-28 | 22d | 00/09/16 | 00/10/08 | 100/9/16 | 100/10/8 |
| 58 | 3.1.1.2.2.1 | Installation | 10d | 2021-12-07 A | 2021-12-17 A | 34SS | 100% | 2021-07-07 | 2021-07-16 | 10d | 00/09/16 | 00/09/26 | 100/9/16 | 100/9/26 |
| 59 | 3.1.1.2.2.2 | Leveling & Plumbness | 4d | 2021-12-17 A | 2021-12-21 A | 58 | 100% | 2021-07-17 | 2021-07-20 | 4d | 00/09/26 | 00/09/30 | 100/9/26 | 100/9/30 |
| 60 | 3.1.1.2.2.3 | Full Bolt & Tightening | 4d | 2021-12-21 A | 2021-12-25 A | 59 | 100% | 2021-07-21 | 2021-07-24 | 4d | 00/09/30 | 00/10/04 | 100/9/30 | 100/10/4 |
| 61 | 3.1.1.2.2.4 | Touch Up | 2d | 2021-12-25 A | 2021-12-27 A | 60 | 100% | 2021-07-25 | 2021-07-26 | 2d | 00/10/04 | 00/10/06 | 100/10/4 | 100/10/6 |
| 62 | 3.1.1.2.2.5 | Certificate | 2d | 2021-12-27 A | 2021-12-29 A | 61 | 100% | 2021-07-27 | 2021-07-28 | 2d | 00/10/06 | 00/10/08 | 100/10/6 | 100/10/8 |
| 63 | 3.1.1.2.3 | **2A3 Platform** | 16d | 2021-12-07 A | 2021-12-23 A |  | 100% | 2021-07-07 | 2021-07-22 | 16d | 00/09/16 | 00/10/02 | 100/9/16 | 100/10/2 |
| 64 | 3.1.1.2.3.1 | Installation | 6d | 2021-12-07 A | 2021-12-13 A | 34SS | 100% | 2021-07-07 | 2021-07-12 | 6d | 00/09/16 | 00/09/22 | 100/9/16 | 100/9/22 |
| 65 | 3.1.1.2.3.2 | Leveling & Plumbness | 2d | 2021-12-13 A | 2021-12-15 A | 64 | 100% | 2021-07-13 | 2021-07-14 | 2d | 00/09/22 | 00/09/24 | 100/9/22 | 100/9/24 |
| 66 | 3.1.1.2.3.3 | Full Bolt & Tightening | 4d | 2021-12-15 A | 2021-12-19 A | 65 | 100% | 2021-07-15 | 2021-07-18 | 4d | 00/09/24 | 00/09/28 | 100/9/24 | 100/9/28 |
| 67 | 3.1.1.2.3.4 | Touch Up | 2d | 2021-12-19 A | 2021-12-21 A | 66 | 100% | 2021-07-19 | 2021-07-20 | 2d | 00/09/28 | 00/09/30 | 100/9/28 | 100/9/30 |
| 68 | 3.1.1.2.3.5 | Certificate | 2d | 2021-12-21 A | 2021-12-23 A | 67 | 100% | 2021-07-21 | 2021-07-22 | 2d | 00/09/30 | 00/10/02 | 100/9/30 | 100/10/2 |
| 69 | 3.1.1.2.4 | **2A4 Platform** | 16d | 2021-12-07 A | 2021-12-23 A |  | 100% | 2021-07-07 | 2021-07-22 | 16d | 00/09/16 | 00/10/02 | 100/9/16 | 100/10/2 |
| 70 | 3.1.1.2.4.1 | Installation | 6d | 2021-12-07 A | 2021-12-13 A | 34SS | 100% | 2021-07-07 | 2021-07-12 | 6d | 00/09/16 | 00/09/22 | 100/9/16 | 100/9/22 |
| 71 | 3.1.1.2.4.2 | Leveling & Plumbness | 2d | 2021-12-13 A | 2021-12-15 A | 70 | 100% | 2021-07-13 | 2021-07-14 | 2d | 00/09/22 | 00/09/24 | 100/9/22 | 100/9/24 |
| 72 | 3.1.1.2.4.3 | Full Bolt & Tightening | 4d | 2021-12-15 A | 2021-12-19 A | 71 | 100% | 2021-07-15 | 2021-07-18 | 4d | 00/09/24 | 00/09/28 | 100/9/24 | 100/9/28 |
| 73 | 3.1.1.2.4.4 | Touch Up | 2d | 2021-12-19 A | 2021-12-21 A | 72 | 100% | 2021-07-19 | 2021-07-20 | 2d | 00/09/28 | 00/09/30 | 100/9/28 | 100/9/30 |
| 74 | 3.1.1.2.4.5 | Certificate | 2d | 2021-12-21 A | 2021-12-23 A | 73 | 100% | 2021-07-21 | 2021-07-22 | 2d | 00/09/30 | 00/10/02 | 100/9/30 | 100/10/2 |
| 75 | 3.1.1.2.5 | **2A5 Platform** | 16d | 2021-12-07 A | 2021-12-23 A |  | 100% | 2021-07-07 | 2021-07-22 | 16d | 00/09/16 | 00/10/02 | 100/9/16 | 100/10/2 |
| 76 | 3.1.1.2.5.1 | Installation | 6d | 2021-12-07 A | 2021-12-13 A | 34SS | 100% | 2021-07-07 | 2021-07-12 | 6d | 00/09/16 | 00/09/22 | 100/9/16 | 100/9/22 |
| 77 | 3.1.1.2.5.2 | Leveling & Plumbness | 2d | 2021-12-13 A | 2021-12-15 A | 76 | 100% | 2021-07-13 | 2021-07-14 | 2d | 00/09/22 | 00/09/24 | 100/9/22 | 100/9/24 |
| 78 | 3.1.1.2.5.3 | Full Bolt & Tightening | 4d | 2021-12-15 A | 2021-12-19 A | 77 | 100% | 2021-07-15 | 2021-07-18 | 4d | 00/09/24 | 00/09/28 | 100/9/24 | 100/9/28 |
| 79 | 3.1.1.2.5.4 | Touch Up | 2d | 2021-12-19 A | 2021-12-21 A | 78 | 100% | 2021-07-19 | 2021-07-20 | 2d | 00/09/28 | 00/09/30 | 100/9/28 | 100/9/30 |
| 80 | 3.1.1.2.5.5 | Certificate | 2d | 2021-12-21 A | 2021-12-23 A | 79 | 100% | 2021-07-21 | 2021-07-22 | 2d | 00/09/30 | 00/10/02 | 100/9/30 | 100/10/2 |

| ID | WBS | Task | Duration | Start | Finish | Predecessors | Complete | Remaining | Baseline start | Baseline finish | Baseline duration | Total slack | Free slack | per | Text2 | Persian Start | Persian Finish |
| --- | --- | --- | --- | --- | --- | --- | --- | --- | --- | --- | --- | --- | --- | --- | --- | --- | --- |
| 81 | 3.1.1.2.6 | **2B Railing (Handrail) for Radiant Platforms** | 15d | 2021-12-07 A | 2021-12-22 |  | 70% | 4.5d | 2021-07-07 | 2021-07-21 | 15d | 209d |  | 00/09/16 | 00/10/01 | 100/9/16 | 100/10/1 |
| 82 | 3.1.1.2.6.1 | Installation | 12d | 2021-12-07 A | 2021-12-19 | 34SS | 70% | 3.6d | 2021-07-07 | 2021-07-18 | 12d | 212d | 0d | 00/09/16 | 00/09/28 | 100/9/16 | 100/9/28 |
| 83 | 3.1.1.2.6.2 | Tightening or Welding | 10d | 2021-12-08 A | 2021-12-18 | 82SS+1d | 70% | 3d | 2021-07-08 | 2021-07-17 | 10d | 1.4d | 0d | 00/09/17 | 00/09/27 | 100/9/17 | 100/9/27 |
| 84 | 3.1.1.2.6.3 | Touch Up | 2d | 2021-12-18 A | 2021-12-20 | 83 | 70% | 0.6d | 2021-07-18 | 2021-07-19 | 2d | 1.4d | 0d | 00/09/27 | 00/09/29 | 100/9/27 | 100/9/29 |
| 85 | 3.1.1.2.6.4 | Certificate | 2d | 2021-12-20 A | 2021-12-22 | 84 | 70% | 0.6d | 2021-07-20 | 2021-07-21 | 2d | 207d | 144d | 00/09/29 | 00/10/01 | 100/9/29 | 100/10/1 |
| 86 | 3.1.1.2.7 | **2C Ladders for Radiant Platforms** | 18d | 2021-12-07 A | 2021-12-25 |  | 70% | 5.4d | 2021-07-07 | 2021-07-24 | 18d | 204d |  | 00/09/16 | 00/10/04 | 100/9/16 | 100/10/4 |
| 87 | 3.1.1.2.7.1 | Installation | 8d | 2021-12-07 A | 2021-12-15 | 34SS | 70% | 2.4d | 2021-07-07 | 2021-07-14 | 8d | 2.8d | 0d | 00/09/16 | 00/09/24 | 100/9/16 | 100/9/24 |
| 88 | 3.1.1.2.7.2 | Leveling & Plumbness | 4d | 2021-12-15 A | 2021-12-19 | 87 | 70% | 1.2d | 2021-07-15 | 2021-07-18 | 4d | 1.4d | 0d | 00/09/24 | 00/09/28 | 100/9/24 | 100/9/28 |
| 89 | 3.1.1.2.7.3 | Full Bolt & Tightening | 2d | 2021-12-19 A | 2021-12-21 | 88 | 70% | 0.6d | 2021-07-19 | 2021-07-20 | 2d | 1.4d | 0d | 00/09/28 | 00/09/30 | 100/9/28 | 100/9/30 |
| 90 | 3.1.1.2.7.4 | Touch Up | 2d | 2021-12-21 A | 2021-12-23 | 89 | 70% | 0.6d | 2021-07-21 | 2021-07-22 | 2d | 1.4d | 0d | 00/09/30 | 00/10/02 | 100/9/30 | 100/10/2 |
| 91 | 3.1.1.2.7.5 | Certificate | 2d | 2021-12-23 A | 2021-12-25 | 90 | 70% | 0.6d | 2021-07-23 | 2021-07-24 | 2d | 204d | 141d | 00/10/02 | 00/10/04 | 100/10/2 | 100/10/4 |
| 92 | 3.1.1.2.8 | **2D Grating for Radiant Platforms** | 20d | 2021-12-07 A | 2021-12-27 |  | 70% | 6d | 2021-07-07 | 2021-07-26 | 20d | 202d |  | 00/09/16 | 00/10/06 | 100/9/16 | 100/10/6 |
| 93 | 3.1.1.2.8.1 | Installation | 12d | 2021-12-07 A | 2021-12-19 | 34SS | 70% | 3.6d | 2021-07-07 | 2021-07-18 | 12d | 4.2d | 0d | 00/09/16 | 00/09/28 | 100/9/16 | 100/9/28 |
| 94 | 3.1.1.2.8.2 | Tightening | 6d | 2021-12-19 A | 2021-12-25 | 93 | 70% | 1.8d | 2021-07-19 | 2021-07-24 | 6d | 1.4d | 0d | 00/09/28 | 00/10/04 | 100/9/28 | 100/10/4 |
| 95 | 3.1.1.2.8.3 | Certificate | 2d | 2021-12-25 A | 2021-12-27 | 94 | 70% | 0.6d | 2021-07-25 | 2021-07-26 | 2d | 202d | 139d | 00/10/04 | 00/10/06 | 100/10/4 | 100/10/6 |
| 96 | 3.1.1.3 | **Convection, Header Box & Convection Breeching Plate Sections** | 56.2d | 2021-12-20 A | 2022-02-14 |  | 55% | 25.2d | 2021-07-29 | 2022-01-22 | 178d | 131d |  | 00/10/08 | 01/04/04 | 100/9/29 | 100/11/25 |
| 97 | 3.1.1.3.1 | **3A Convection Floor Panels** | 20d | 2021-12-29 A | 2022-01-18 A |  | 100% |  | 2021-07-29 | 2021-08-17 | 20d |  |  | 00/10/08 | 00/10/28 | 100/10/8 | 100/10/28 |
| 98 | 3.1.1.3.1.1 | Installation | 8d | 2021-12-29 A | 2022-01-06 A | 37, 62, 68, 74, 80, 85, 91, 95 | 100% |  | 2021-07-29 | 2021-08-05 | 8d |  |  | 00/10/08 | 00/10/16 | 100/10/8 | 100/10/16 |
| 99 | 3.1.1.3.1.2 | Full Bolt & Tightening | 6d | 2022-01-06 A | 2022-01-12 A | 98 | 100% |  | 2021-08-06 | 2021-08-11 | 6d |  |  | 00/10/16 | 00/10/22 | 100/10/16 | 100/10/22 |
| 100 | 3.1.1.3.1.3 | Touch Up | 4d | 2022-01-12 A | 2022-01-16 A | 99 | 100% |  | 2021-08-12 | 2021-08-15 | 4d |  |  | 00/10/22 | 00/10/26 | 100/10/22 | 100/10/26 |
| 101 | 3.1.1.3.1.4 | Certificate | 2d | 2022-01-16 A | 2022-01-18 A | 100 | 100% |  | 2021-08-16 | 2021-08-17 | 2d |  |  | 00/10/26 | 00/10/28 | 100/10/26 | 100/10/28 |
| 102 | 3.1.1.3.2 | **3B Convection Side Wall (Inside)** | 27d | 2022-01-18 A | 2022-02-14 |  | 69% | 8.5d | 2021-08-18 | 2021-09-13 | 27d | 52d |  | 00/10/28 | 00/11/25 | 100/10/28 | 100/11/25 |
| 103 | 3.1.1.3.2.1 | Installation | 8d | 2022-01-18 A | 2022-01-26 A | 139SS | 100% |  | 2021-08-18 | 2021-08-25 | 8d |  |  | 00/10/28 | 00/11/06 | 100/10/28 | 100/11/6 |
| 104 | 3.1.1.3.2.2 | Leveling & Plumbness | 8d | 2022-01-26 A | 2022-02-03 A | 103 | 100% |  | 2021-08-26 | 2021-09-02 | 8d |  |  | 00/11/06 | 00/11/14 | 100/11/6 | 100/11/14 |
| 105 | 3.1.1.3.2.3 | Full Bolt & Tightening | 5d | 2022-02-03 A | 2022-02-08 | 104 | 50% | 2.5d | 2021-09-03 | 2021-09-07 | 5d | 52d | 0d | 00/11/14 | 00/11/19 | 100/11/14 | 100/11/19 |
| 106 | 3.1.1.3.2.4 | Touch Up | 4d | 2022-02-08 | 2022-02-12 | 105 |  |  | 2021-09-08 | 2021-09-11 | 4d | 52d | 0d | 00/11/19 | 00/11/23 | 100/11/19 | 100/11/23 |
| 107 | 3.1.1.3.2.5 | Certificate | 2d | 2022-02-12 | 2022-02-14 | 106 |  |  | 2021-09-12 | 2021-09-13 | 2d | 52d | 10d | 00/11/23 | 00/11/25 | 100/11/23 | 100/11/25 |

| ID | WBS | Task | Duration | Start | Finish | Predecessors | Complete | Remaining | Baseline start | Baseline finish | Baseline duration | Total slack | Free slack | per | Text2 | Persian Start | Persian Finish |
| --- | --- | --- | --- | --- | --- | --- | --- | --- | --- | --- | --- | --- | --- | --- | --- | --- | --- |
| 108 | 3.1.1.3.3 | **3C Convection Side Wall (Outside)** | 24d | 2022-01-18 A | 2022-02-11 |  | 63% | 9d | 2021-08-18 | 2021-09-10 | 24d | 0.75d | 0d | 00/10/28 | 00/11/22 | 100/10/28 | 100/11/22 |
| 109 | 3.1.1.3.3.1 | Installation | 6d | 2022-01-18 A | 2022-01-24 A | 139SS | 100% |  | 2021-08-18 | 2021-08-23 | 6d |  |  | 00/10/28 | 00/11/04 | 100/10/28 | 100/11/4 |
| 110 | 3.1.1.3.3.2 | Leveling & Plumbness | 6d | 2022-01-24 A | 2022-01-30 A | 109 | 100% |  | 2021-08-24 | 2021-08-29 | 6d |  |  | 00/11/04 | 00/11/10 | 100/11/4 | 100/11/10 |
| 111 | 3.1.1.3.3.3 | Full Bolt & Tightening | 6d | 2022-01-30 A | 2022-02-05 | 110 | 50% | 3d | 2021-08-30 | 2021-09-04 | 6d | 0.75d | 0d | 00/11/10 | 00/11/16 | 100/11/10 | 100/11/16 |
| 112 | 3.1.1.3.3.4 | Touch Up | 4d | 2022-02-05 | 2022-02-09 | 111 |  |  | 2021-09-05 | 2021-09-08 | 4d | 0.75d | 0d | 00/11/16 | 00/11/20 | 100/11/16 | 100/11/20 |
| 113 | 3.1.1.3.3.5 | Certificate | 2d | 2022-02-09 | 2022-02-11 | 112 |  |  | 2021-09-09 | 2021-09-10 | 2d | 0.75d |  | 00/11/20 | 00/11/22 | 100/11/20 | 100/11/22 |
| 114 | 3.1.1.3.4 | **3D Header Boxes** | 16d | 2021-12-20 | 2022-01-04 |  |  |  | 2022-01-07 | 2022-01-22 | 16d | 171.2d |  | 01/03/19 | 01/04/04 | 100/9/29 | 100/10/14 |
| 115 | 3.1.1.3.4.1 | Installation | 6d | 2021-12-20 | 2021-12-25 | 241 |  |  | 2022-01-07 | 2022-01-12 | 6d | 171.2d | 0d | 01/03/19 | 01/03/25 | 100/9/29 | 100/10/4 |
| 116 | 3.1.1.3.4.2 | Full Bolt & Tightening | 6d | 2021-12-26 | 2021-12-31 | 115 |  |  | 2022-01-13 | 2022-01-18 | 6d | 171.2d | 0d | 01/03/25 | 01/03/31 | 100/10/5 | 100/10/10 |
| 117 | 3.1.1.3.4.3 | Touch Up | 2d | 2022-01-01 | 2022-01-02 | 116 |  |  | 2022-01-19 | 2022-01-20 | 2d | 171.2d | 0d | 01/03/31 | 01/04/02 | 100/10/11 | 100/10/12 |
| 118 | 3.1.1.3.4.4 | Certificate | 2d | 2022-01-03 | 2022-01-04 | 117 |  |  | 2022-01-21 | 2022-01-22 | 2d | 171.2d | 0d | 01/04/02 | 01/04/04 | 100/10/13 | 100/10/14 |
| 119 | 3.1.1.3.5 | **3E Convection Breeching** | 10d | 2021-12-20 | 2021-12-29 |  |  |  | 2022-01-07 | 2022-01-16 | 10d | 177.2d |  | 01/03/19 | 01/03/29 | 100/9/29 | 100/10/8 |
| 120 | 3.1.1.3.5.1 | Installation | 2d | 2021-12-20 | 2021-12-21 | 241 |  |  | 2022-01-07 | 2022-01-08 | 2d | 177.2d | 0d | 01/03/19 | 01/03/21 | 100/9/29 | 100/9/30 |
| 121 | 3.1.1.3.5.2 | Full Bolt & Tightening | 4d | 2021-12-22 | 2021-12-25 | 120 |  |  | 2022-01-09 | 2022-01-12 | 4d | 177.2d | 0d | 01/03/21 | 01/03/25 | 100/10/1 | 100/10/4 |
| 122 | 3.1.1.3.5.3 | Touch Up | 2d | 2021-12-26 | 2021-12-27 | 121 |  |  | 2022-01-13 | 2022-01-14 | 2d | 177.2d | 0d | 01/03/25 | 01/03/27 | 100/10/5 | 100/10/6 |
| 123 | 3.1.1.3.5.4 | Certificate | 2d | 2021-12-28 | 2021-12-29 | 122 |  |  | 2022-01-15 | 2022-01-16 | 2d | 177.2d | 6d | 01/03/27 | 01/03/29 | 100/10/7 | 100/10/8 |
| 124 | 3.1.1.4 | **Flue Gas Duct & Stack Plate Sections** | 22d | 2022-01-05 | 2022-01-26 |  |  |  | 2022-01-23 | 2022-02-13 | 22d | 171.2d |  | 01/04/04 | 01/04/26 | 100/10/15 | 100/11/6 |
| 125 | 3.1.1.4.1 | **3F Flue Gas Duct** | 5d | 2022-01-05 | 2022-01-09 |  |  |  | 2022-01-23 | 2022-01-27 | 5d | 171.2d |  | 01/04/04 | 01/04/09 | 100/10/15 | 100/10/19 |
| 126 | 3.1.1.4.1.1 | Installation | 1d | 2022-01-05 | 2022-01-05 | 118, 123 |  |  | 2022-01-23 | 2022-01-23 | 1d | 171.2d | 0d | 01/04/04 | 01/04/05 | 100/10/15 | 100/10/15 |
| 127 | 3.1.1.4.1.2 | Leveling & Plumbness | 1d | 2022-01-06 | 2022-01-06 | 126 |  |  | 2022-01-24 | 2022-01-24 | 1d | 171.2d | 0d | 01/04/05 | 01/04/06 | 100/10/16 | 100/10/16 |
| 128 | 3.1.1.4.1.3 | Full Bolt & Tightening | 1d | 2022-01-07 | 2022-01-07 | 127 |  |  | 2022-01-25 | 2022-01-25 | 1d | 171.2d | 0d | 01/04/06 | 01/04/07 | 100/10/17 | 100/10/17 |
| 129 | 3.1.1.4.1.4 | Touch Up | 1d | 2022-01-08 | 2022-01-08 | 128 |  |  | 2022-01-26 | 2022-01-26 | 1d | 171.2d | 0d | 01/04/07 | 01/04/08 | 100/10/18 | 100/10/18 |
| 130 | 3.1.1.4.1.5 | Certificate | 1d | 2022-01-09 | 2022-01-09 | 129 |  |  | 2022-01-27 | 2022-01-27 | 1d | 171.2d | 0d | 01/04/08 | 01/04/09 | 100/10/19 | 100/10/19 |
| 131 | 3.1.1.4.2 | **3G Stack** | 5d | 2022-01-22 | 2022-01-26 |  |  |  | 2022-02-09 | 2022-02-13 | 5d | 171.2d |  | 01/04/21 | 01/04/26 | 100/11/2 | 100/11/6 |
| 132 | 3.1.1.4.2.1 | Installation | 1d | 2022-01-22 | 2022-01-22 | 318 |  |  | 2022-02-09 | 2022-02-09 | 1d | 171.2d | 0d | 01/04/21 | 01/04/22 | 100/11/2 | 100/11/2 |
| 133 | 3.1.1.4.2.2 | Leveling & Plumbness | 1d | 2022-01-23 | 2022-01-23 | 132 |  |  | 2022-02-10 | 2022-02-10 | 1d | 171.2d | 0d | 01/04/22 | 01/04/23 | 100/11/3 | 100/11/3 |
| 134 | 3.1.1.4.2.3 | Full Bolt & Tightening | 1d | 2022-01-24 | 2022-01-24 | 133 |  |  | 2022-02-11 | 2022-02-11 | 1d | 171.2d | 0d | 01/04/23 | 01/04/24 | 100/11/4 | 100/11/4 |
| 135 | 3.1.1.4.2.4 | Touch Up | 1d | 2022-01-25 | 2022-01-25 | 134 |  |  | 2022-02-12 | 2022-02-12 | 1d | 171.2d | 0d | 01/04/24 | 01/04/25 | 100/11/5 | 100/11/5 |
| 136 | 3.1.1.4.2.5 | Certificate | 1d | 2022-01-26 | 2022-01-26 | 135 |  |  | 2022-02-13 | 2022-02-13 | 1d | 171.2d | 108.2d | 01/04/25 | 01/04/26 | 100/11/6 | 100/11/6 |

| ID | WBS | Task | Duration | Start | Finish | Predecessors | Baseline start | Baseline finish | Baseline duration | Total slack | Free slack | per | Text2 | Persian Start | Persian Finish |
| --- | --- | --- | --- | --- | --- | --- | --- | --- | --- | --- | --- | --- | --- | --- | --- |
| 137 | 3.1.1.5 | **Convection & Upper Steel Sections** | 75d | 2022-01-18 | 2022-04-03 |  | 2021-08-18 | 2021-10-31 | 75d | 49d |  | 00/10/28 | 01/01/14 | 100/10/28 | 101/1/14 |
| 138 | 3.1.1.5.1 | **4A1 Platform** | 22d | 2022-01-18 | 2022-02-09 |  | 2021-08-18 | 2021-09-08 | 22d | 57d |  | 00/10/28 | 00/11/20 | 100/10/28 | 100/11/20 |
| 139 | 3.1.1.5.1.1 | Installation | 8d | 2022-01-18 | 2022-01-26 | 101 | 2021-08-18 | 2021-08-25 | 8d | 57d | 0d | 00/10/28 | 00/11/06 | 100/10/28 | 100/11/6 |
| 140 | 3.1.1.5.1.2 | Leveling & Plumbness | 4d | 2022-01-26 | 2022-01-30 | 139 | 2021-08-26 | 2021-08-29 | 4d | 57d | 0d | 00/11/06 | 00/11/10 | 100/11/6 | 100/11/10 |
| 141 | 3.1.1.5.1.3 | Full Bolt & Tightening | 6d | 2022-01-30 | 2022-02-05 | 140 | 2021-08-30 | 2021-09-04 | 6d | 57d | 0d | 00/11/10 | 00/11/16 | 100/11/10 | 100/11/16 |
| 142 | 3.1.1.5.1.4 | Touch Up | 2d | 2022-02-05 | 2022-02-07 | 141 | 2021-09-05 | 2021-09-06 | 2d | 57d | 0d | 00/11/16 | 00/11/18 | 100/11/16 | 100/11/18 |
| 143 | 3.1.1.5.1.5 | Certificate | 2d | 2022-02-07 | 2022-02-09 | 142 | 2021-09-07 | 2021-09-08 | 2d | 57d | 15d | 00/11/18 | 00/11/20 | 100/11/18 | 100/11/20 |
| 144 | 3.1.1.5.2 | **4A2 Columns and Structural Steel** | 16d | 2022-01-18 | 2022-02-03 |  | 2021-08-18 | 2021-09-02 | 16d | 63d |  | 00/10/28 | 00/11/14 | 100/10/28 | 100/11/14 |
| 145 | 3.1.1.5.2.1 | Installation | 6d | 2022-01-18 | 2022-01-24 | 139SS | 2021-08-18 | 2021-08-23 | 6d | 63d | 0d | 00/10/28 | 00/11/04 | 100/10/28 | 100/11/4 |
| 146 | 3.1.1.5.2.2 | Leveling & Plumbness | 2d | 2022-01-24 | 2022-01-26 | 145 | 2021-08-24 | 2021-08-25 | 2d | 63d | 0d | 00/11/04 | 00/11/06 | 100/11/4 | 100/11/6 |
| 147 | 3.1.1.5.2.3 | Full Bolt & Tightening | 4d | 2022-01-26 | 2022-01-30 | 146 | 2021-08-26 | 2021-08-29 | 4d | 63d | 0d | 00/11/06 | 00/11/10 | 100/11/6 | 100/11/10 |
| 148 | 3.1.1.5.2.4 | Touch Up | 2d | 2022-01-30 | 2022-02-01 | 147 | 2021-08-30 | 2021-08-31 | 2d | 63d | 0d | 00/11/10 | 00/11/12 | 100/11/10 | 100/11/12 |
| 149 | 3.1.1.5.2.5 | Certificate | 2d | 2022-02-01 | 2022-02-03 | 148 | 2021-09-01 | 2021-09-02 | 2d | 63d | 21d | 00/11/12 | 00/11/14 | 100/11/12 | 100/11/14 |
| 150 | 3.1.1.5.3 | **4A3 Columns and Structural Steel** | 38d | 2022-02-24 | 2022-04-03 |  | 2021-09-24 | 2021-10-31 | 38d | 42d |  | 00/12/05 | 01/01/14 | 100/12/5 | 101/1/14 |
| 151 | 3.1.1.5.3.1 | Installation | 14d | 2022-02-24 | 2022-03-10 | 107, 113, 143, 149, 265, 271, 277, 284, 291 | 2021-09-24 | 2021-10-07 | 14d | 42d | 0d | 00/12/05 | 00/12/19 | 100/12/5 | 100/12/19 |
| 152 | 3.1.1.5.3.2 | Leveling & Plumbness | 8d | 2022-03-10 | 2022-03-18 | 151 | 2021-10-08 | 2021-10-15 | 8d | 42d | 0d | 00/12/19 | 00/12/27 | 100/12/19 | 100/12/27 |
| 153 | 3.1.1.5.3.3 | Full Bolt & Tightening | 12d | 2022-03-18 | 2022-03-30 | 152 | 2021-10-16 | 2021-10-27 | 12d | 42d | 0d | 00/12/27 | 01/01/10 | 100/12/27 | 101/1/10 |
| 154 | 3.1.1.5.3.4 | Touch Up | 2d | 2022-03-30 | 2022-04-01 | 153 | 2021-10-28 | 2021-10-29 | 2d | 42d | 0d | 01/01/10 | 01/01/12 | 101/1/10 | 101/1/12 |
| 155 | 3.1.1.5.3.5 | Certificate | 2d | 2022-04-01 | 2022-04-03 | 154 | 2021-10-30 | 2021-10-31 | 2d | 42d | 0d | 01/01/12 | 01/01/14 | 101/1/12 | 101/1/14 |
| 156 | 3.1.1.5.4 | **4B Railing (Handrail) for Convection & Upper Sections Platforms** | 36d | 2022-02-24 | 2022-04-01 |  | 2021-09-24 | 2021-10-29 | 36d | 51d |  | 00/12/05 | 01/01/12 | 100/12/5 | 101/1/12 |
| 157 | 3.1.1.5.4.1 | Installation | 36d | 2022-02-24 | 2022-04-01 | 151SS | 2021-09-24 | 2021-10-29 | 36d | 51d | 0d | 00/12/05 | 01/01/12 | 100/12/5 | 101/1/12 |
| 158 | 3.1.1.5.4.2 | Tightening or Welding | 20d | 2022-02-25 | 2022-03-17 | 157SS+1d | 2021-09-25 | 2021-10-14 | 20d | 51d | 0d | 00/12/06 | 00/12/26 | 100/12/6 | 100/12/26 |
| 159 | 3.1.1.5.4.3 | Touch Up | 6d | 2022-03-17 | 2022-03-23 | 158 | 2021-10-15 | 2021-10-20 | 6d | 51d | 0d | 00/12/26 | 01/01/03 | 100/12/26 | 101/1/3 |
| 160 | 3.1.1.5.4.4 | Certificate | 2d | 2022-03-23 | 2022-03-25 | 159 | 2021-10-21 | 2021-10-22 | 2d | 51d | 9d | 01/01/03 | 01/01/05 | 101/1/3 | 101/1/5 |

| ID | WBS | Task | Duration | Start | Finish | Predecessors | Baseline start | Baseline finish | Baseline duration | Total slack | Free slack | per | Text2 | Persian Start | Persian Finish |
| --- | --- | --- | --- | --- | --- | --- | --- | --- | --- | --- | --- | --- | --- | --- | --- |
| 161 | 3.1.1.5.5 | **4C Ladder for Convection & Upper Sections Platforms** | 18d | 2022-02-24 | 2022-03-14 |  | 2021-09-24 | 2021-10-11 | 18d | 62d |  | 00/12/05 | 00/12/23 | 100/12/5 | 100/12/23 |
| 162 | 3.1.1.5.5.1 | Installation | 6d | 2022-02-24 | 2022-03-02 | 151SS | 2021-09-24 | 2021-09-29 | 6d | 62d | 0d | 00/12/05 | 00/12/11 | 100/12/5 | 100/12/11 |
| 163 | 3.1.1.5.5.2 | Leveling & Plumbness | 4d | 2022-03-02 | 2022-03-06 | 162 | 2021-09-30 | 2021-10-03 | 4d | 62d | 0d | 00/12/11 | 00/12/15 | 100/12/11 | 100/12/15 |
| 164 | 3.1.1.5.5.3 | Full Bolt & Tightening | 4d | 2022-03-06 | 2022-03-10 | 163 | 2021-10-04 | 2021-10-07 | 4d | 62d | 0d | 00/12/15 | 00/12/19 | 100/12/15 | 100/12/19 |
| 165 | 3.1.1.5.5.4 | Touch Up | 2d | 2022-03-10 | 2022-03-12 | 164 | 2021-10-08 | 2021-10-09 | 2d | 62d | 0d | 00/12/19 | 00/12/21 | 100/12/19 | 100/12/21 |
| 166 | 3.1.1.5.5.5 | Certificate | 2d | 2022-03-12 | 2022-03-14 | 165 | 2021-10-10 | 2021-10-11 | 2d | 62d | 20d | 00/12/21 | 00/12/23 | 100/12/21 | 100/12/23 |
| 167 | 3.1.1.5.6 | **4D Grating for Convection & Upper Sections Platforms** | 34d | 2022-02-24 | 2022-03-30 |  | 2021-09-24 | 2021-10-27 | 34d | 46d |  | 00/12/05 | 01/01/10 | 100/12/5 | 101/1/10 |
| 168 | 3.1.1.5.6.1 | Installation | 24d | 2022-02-24 | 2022-03-20 | 151SS | 2021-09-24 | 2021-10-17 | 24d | 46d | 0d | 00/12/05 | 00/12/29 | 100/12/5 | 100/12/29 |
| 169 | 3.1.1.5.6.2 | Tightening | 8d | 2022-03-20 | 2022-03-28 | 168 | 2021-10-18 | 2021-10-25 | 8d | 46d | 0d | 00/12/29 | 01/01/08 | 100/12/29 | 101/1/8 |
| 170 | 3.1.1.5.6.3 | Certificate | 2d | 2022-03-28 | 2022-03-30 | 169 | 2021-10-26 | 2021-10-27 | 2d | 46d | 4d | 01/01/08 | 01/01/10 | 101/1/8 | 101/1/10 |
| 171 | 3.1.1.6 | **Other Accessories** | 8d | 2021-10-22 | 2021-10-29 |  | 2021-11-29 | 2021-12-06 | 8d | 200.2d |  | 01/02/11 | 01/02/19 | 100/7/30 | 100/8/7 |
| 172 | 3.1.1.6.1 | **Peep Doors** | 8d | 2021-10-22 | 2021-10-29 |  | 2021-11-29 | 2021-12-06 | 8d | 200.2d |  | 01/02/11 | 01/02/19 | 100/7/30 | 100/8/7 |
| 173 | 3.1.1.6.1.1 | Installation | 4d | 2021-10-22 | 2021-10-25 |  | 2021-11-29 | 2021-12-02 | 4d | 200.2d | 0d | 01/02/11 | 01/02/15 | 100/7/30 | 100/8/3 |
| 174 | 3.1.1.6.1.2 | Tightening | 2d | 2021-10-26 | 2021-10-27 | 173 | 2021-12-03 | 2021-12-04 | 2d | 200.2d | 0d | 01/02/15 | 01/02/17 | 100/8/4 | 100/8/5 |
| 175 | 3.1.1.6.1.3 | Certificate | 2d | 2021-10-28 | 2021-10-29 | 174 | 2021-12-05 | 2021-12-06 | 2d | 200.2d | 0d | 01/02/17 | 01/02/19 | 100/8/6 | 100/8/7 |
| 176 | 3.1.1.6.2 | **Access Doors** | 6d | 2021-10-22 | 2021-10-27 |  | 2021-11-29 | 2021-12-04 | 6d | 262.2d |  | 01/02/11 | 01/02/17 | 100/7/30 | 100/8/5 |
| 177 | 3.1.1.6.2.1 | Installation | 2d | 2021-10-22 | 2021-10-23 |  | 2021-11-29 | 2021-11-30 | 2d | 262.2d | 0d | 01/02/11 | 01/02/13 | 100/7/30 | 100/8/1 |
| 178 | 3.1.1.6.2.2 | Tightening | 2d | 2021-10-24 | 2021-10-25 | 177 | 2021-12-01 | 2021-12-02 | 2d | 262.2d | 0d | 01/02/13 | 01/02/15 | 100/8/2 | 100/8/3 |
| 179 | 3.1.1.6.2.3 | Certificate | 2d | 2021-10-26 | 2021-10-27 | 178 | 2021-12-03 | 2021-12-04 | 2d | 262.2d | 199.2d | 01/02/15 | 01/02/17 | 100/8/4 | 100/8/5 |
| 180 | 3.1.2 | **Furnace Coils System** | 89d | 2021-10-22 | 2022-01-18 |  | 2021-11-09 | 2022-02-05 | 89d | 43.95d |  | 01/01/22 | 01/04/18 | 100/7/30 | 100/10/28 |
| 181 | 3.1.2.1 | **Radiant Coils & Accessories** | 20d | 2021-10-22 | 2021-11-10 |  | 2021-11-29 | 2021-12-18 | 20d | 76.95d |  | 01/02/11 | 01/02/31 | 100/7/30 | 100/8/19 |
| 182 | 3.1.2.1.1 | **Radiant Coils (Inlet Coil & Outlet Coil)** | 20d | 2021-10-22 | 2021-11-10 |  | 2021-11-29 | 2021-12-18 | 20d | 76.95d |  | 01/02/11 | 01/02/31 | 100/7/30 | 100/8/19 |
| 183 | 3.1.2.1.1.1 | Installation | 6d | 2021-10-22 | 2021-10-27 |  | 2021-11-29 | 2021-12-04 | 6d | 76.95d | 0d | 01/02/11 | 01/02/17 | 100/7/30 | 100/8/5 |
| 184 | 3.1.2.1.1.2 | Fit Up | 10d | 2021-10-23 | 2021-11-01 | 183SS+1d | 2021-11-30 | 2021-12-09 | 10d | 76.95d | 0d | 01/02/12 | 01/02/22 | 100/8/1 | 100/8/10 |
| 185 | 3.1.2.1.1.3 | Welding | 12d | 2021-10-24 | 2021-11-04 | 184SS+1d | 2021-12-01 | 2021-12-12 | 12d | 76.95d | 0d | 01/02/13 | 01/02/25 | 100/8/2 | 100/8/13 |
| 186 | 3.1.2.1.1.4 | NDT | 2d | 2021-11-05 | 2021-11-06 | 185 | 2021-12-13 | 2021-12-14 | 2d | 76.95d | 0d | 01/02/25 | 01/02/27 | 100/8/14 | 100/8/15 |
| 187 | 3.1.2.1.1.5 | Pneumatic Test | 2d | 2021-11-07 | 2021-11-08 | 186 | 2021-12-15 | 2021-12-16 | 2d | 76.95d | 0d | 01/02/27 | 01/02/29 | 100/8/16 | 100/8/17 |
| 188 | 3.1.2.1.1.6 | Certificate | 2d | 2021-11-09 | 2021-11-10 | 187 | 2021-12-17 | 2021-12-18 | 2d | 76.95d | 0d | 01/02/29 | 01/02/31 | 100/8/18 | 100/8/19 |

| ID | WBS | Task | Duration | Start | Finish | Predecessors | Baseline start | Baseline finish | Baseline duration | Total slack | Free slack | per | Text2 | Persian Start | Persian Finish |
| --- | --- | --- | --- | --- | --- | --- | --- | --- | --- | --- | --- | --- | --- | --- | --- |
| 189 | 3.1.2.2 | **Convection Coils & Accessories** | 89d | 2021-10-22 | 2022-01-18 |  | 2021-11-09 | 2022-02-05 | 89d | 43.95d |  | 01/01/22 | 01/04/18 | 100/7/30 | 100/10/28 |
| 190 | 3.1.2.2.1 | **Economiser (ECO)** | 4d | 2021-11-13 | 2021-11-16 |  | 2021-12-01 | 2021-12-04 | 4d | 43.95d |  | 01/02/13 | 01/02/17 | 100/8/22 | 100/8/25 |
| 191 | 3.1.2.2.1.1 | Installation | 2d | 2021-11-13 | 2021-11-14 | 204 | 2021-12-01 | 2021-12-02 | 2d | 43.95d | 0d | 01/02/13 | 01/02/15 | 100/8/22 | 100/8/23 |
| 192 | 3.1.2.2.1.2 | Certificate | 2d | 2021-11-15 | 2021-11-16 | 191 | 2021-12-03 | 2021-12-04 | 2d | 43.95d | 0d | 01/02/15 | 01/02/17 | 100/8/24 | 100/8/25 |
| 193 | 3.1.2.2.2 | **Feed Preheater (FPH)** | 4d | 2021-11-17 | 2021-11-20 |  | 2021-12-05 | 2021-12-08 | 4d | 43.95d |  | 01/02/17 | 01/02/21 | 100/8/26 | 100/8/29 |
| 194 | 3.1.2.2.2.1 | Installation | 2d | 2021-11-17 | 2021-11-18 | 192 | 2021-12-05 | 2021-12-06 | 2d | 43.95d | 0d | 01/02/17 | 01/02/19 | 100/8/26 | 100/8/27 |
| 195 | 3.1.2.2.2.2 | Certificate | 2d | 2021-11-19 | 2021-11-20 | 194 | 2021-12-07 | 2021-12-08 | 2d | 43.95d | 0d | 01/02/19 | 01/02/21 | 100/8/28 | 100/8/29 |
| 196 | 3.1.2.2.3 | **High Pressure Steam Superheater One (HPSSH-I)** | 4d | 2021-11-05 | 2021-11-08 |  | 2021-11-23 | 2021-11-26 | 4d | 43.95d |  | 01/02/05 | 01/02/09 | 100/8/14 | 100/8/17 |
| 197 | 3.1.2.2.3.1 | Installation | 2d | 2021-11-05 | 2021-11-06 | 201 | 2021-11-23 | 2021-11-24 | 2d | 43.95d | 0d | 01/02/05 | 01/02/07 | 100/8/14 | 100/8/15 |
| 198 | 3.1.2.2.3.2 | Certificate | 2d | 2021-11-07 | 2021-11-08 | 197 | 2021-11-25 | 2021-11-26 | 2d | 43.95d | 0d | 01/02/07 | 01/02/09 | 100/8/16 | 100/8/17 |
| 199 | 3.1.2.2.4 | **High Pressure Steam Superheater Two (HPSSH-II)** | 4d | 2021-11-01 | 2021-11-04 |  | 2021-11-19 | 2021-11-22 | 4d | 43.95d |  | 01/02/01 | 01/02/05 | 100/8/10 | 100/8/13 |
| 200 | 3.1.2.2.4.1 | Installation | 2d | 2021-11-01 | 2021-11-02 | 207 | 2021-11-19 | 2021-11-20 | 2d | 43.95d | 0d | 01/02/01 | 01/02/03 | 100/8/10 | 100/8/11 |
| 201 | 3.1.2.2.4.2 | Certificate | 2d | 2021-11-03 | 2021-11-04 | 200 | 2021-11-21 | 2021-11-22 | 2d | 43.95d | 0d | 01/02/03 | 01/02/05 | 100/8/12 | 100/8/13 |
| 202 | 3.1.2.2.5 | **High Temperature Coil One (HTC-I)** | 4d | 2021-11-09 | 2021-11-12 |  | 2021-11-27 | 2021-11-30 | 4d | 43.95d |  | 01/02/09 | 01/02/13 | 100/8/18 | 100/8/21 |
| 203 | 3.1.2.2.5.1 | Installation | 2d | 2021-11-09 | 2021-11-10 | 198 | 2021-11-27 | 2021-11-28 | 2d | 43.95d | 0d | 01/02/09 | 01/02/11 | 100/8/18 | 100/8/19 |
| 204 | 3.1.2.2.5.2 | Certificate | 2d | 2021-11-11 | 2021-11-12 | 203 | 2021-11-29 | 2021-11-30 | 2d | 43.95d | 0d | 01/02/11 | 01/02/13 | 100/8/20 | 100/8/21 |
| 205 | 3.1.2.2.6 | **High Temperature Coil Two (HTC-II)** | 4d | 2021-10-28 | 2021-10-31 |  | 2021-11-15 | 2021-11-18 | 4d | 43.95d |  | 01/01/28 | 01/02/01 | 100/8/6 | 100/8/9 |
| 206 | 3.1.2.2.6.1 | Installation | 2d | 2021-10-28 | 2021-10-29 | 238 | 2021-11-15 | 2021-11-16 | 2d | 43.95d | 0d | 01/01/28 | 01/01/30 | 100/8/6 | 100/8/7 |
| 207 | 3.1.2.2.6.2 | Certificate | 2d | 2021-10-30 | 2021-10-31 | 206 | 2021-11-17 | 2021-11-18 | 2d | 43.95d | 0d | 01/01/30 | 01/02/01 | 100/8/8 | 100/8/9 |
| 208 | 3.1.2.2.7 | **HT Crossover (HTX)** | 23d | 2021-11-21 | 2021-12-13 |  | 2021-12-09 | 2021-12-31 | 23d | 43.95d |  | 01/02/21 | 01/03/13 | 100/8/30 | 100/9/22 |
| 209 | 3.1.2.2.7.1 | Fit Up | 12d | 2021-11-21 | 2021-12-02 | 195 | 2021-12-09 | 2021-12-20 | 12d | 43.95d | 0d | 01/02/21 | 01/03/02 | 100/8/30 | 100/9/11 |
| 210 | 3.1.2.2.7.2 | Welding | 14d | 2021-11-22 | 2021-12-05 | 209SS+1d | 2021-12-10 | 2021-12-23 | 14d | 43.95d | 0d | 01/02/22 | 01/03/05 | 100/9/1 | 100/9/14 |
| 211 | 3.1.2.2.7.3 | NDT | 2d | 2021-12-06 | 2021-12-07 | 210 | 2021-12-24 | 2021-12-25 | 2d | 43.95d | 0d | 01/03/05 | 01/03/07 | 100/9/15 | 100/9/16 |
| 212 | 3.1.2.2.7.4 | PWHT | 2d | 2021-12-08 | 2021-12-09 | 211 | 2021-12-26 | 2021-12-27 | 2d | 43.95d | 0d | 01/03/07 | 01/03/09 | 100/9/17 | 100/9/18 |
| 213 | 3.1.2.2.7.5 | Pneumatic Test | 2d | 2021-12-10 | 2021-12-11 | 212 | 2021-12-28 | 2021-12-29 | 2d | 43.95d | 0d | 01/03/09 | 01/03/11 | 100/9/19 | 100/9/20 |
| 214 | 3.1.2.2.7.6 | Certificate | 2d | 2021-12-12 | 2021-12-13 | 213 | 2021-12-30 | 2021-12-31 | 2d | 43.95d | 0d | 01/03/11 | 01/03/13 | 100/9/21 | 100/9/22 |

| ID | WBS | Task | Duration | Start | Finish | Predecessors | Baseline start | Baseline finish | Baseline duration | Total slack | Free slack | per | Text2 | Persian Start | Persian Finish |
| --- | --- | --- | --- | --- | --- | --- | --- | --- | --- | --- | --- | --- | --- | --- | --- |
| 215 | 3.1.2.2.8 | **LT Crossover B (LTX-B)** | 19d | 2021-11-21 | 2021-12-09 |  | 2021-12-09 | 2021-12-27 | 19d | 219.2d |  | 01/02/21 | 01/03/09 | 100/8/30 | 100/9/18 |
| 216 | 3.1.2.2.8.1 | Fit Up | 8d | 2021-11-21 | 2021-11-28 | 195 | 2021-12-09 | 2021-12-16 | 8d | 219.2d | 0d | 01/02/21 | 01/02/29 | 100/8/30 | 100/9/7 |
| 217 | 3.1.2.2.8.2 | Welding | 10d | 2021-11-22 | 2021-12-01 | 216SS+1d | 2021-12-10 | 2021-12-19 | 10d | 219.2d | 0d | 01/02/22 | 01/03/01 | 100/9/1 | 100/9/10 |
| 218 | 3.1.2.2.8.3 | NDT | 2d | 2021-12-02 | 2021-12-03 | 217 | 2021-12-20 | 2021-12-21 | 2d | 219.2d | 0d | 01/03/01 | 01/03/03 | 100/9/11 | 100/9/12 |
| 219 | 3.1.2.2.8.4 | PWHT | 2d | 2021-12-04 | 2021-12-05 | 218 | 2021-12-22 | 2021-12-23 | 2d | 219.2d | 0d | 01/03/03 | 01/03/05 | 100/9/13 | 100/9/14 |
| 220 | 3.1.2.2.8.5 | Pneumatic Test | 2d | 2021-12-06 | 2021-12-07 | 219 | 2021-12-24 | 2021-12-25 | 2d | 219.2d | 0d | 01/03/05 | 01/03/07 | 100/9/15 | 100/9/16 |
| 221 | 3.1.2.2.8.6 | Certificate | 2d | 2021-12-08 | 2021-12-09 | 220 | 2021-12-26 | 2021-12-27 | 2d | 219.2d | 40d | 01/03/07 | 01/03/09 | 100/9/17 | 100/9/18 |
| 222 | 3.1.2.2.9 | **LT Crossover T (LTX-T)** | 17d | 2021-11-21 | 2021-12-07 |  | 2021-12-09 | 2021-12-25 | 17d | 221.2d |  | 01/02/21 | 01/03/07 | 100/8/30 | 100/9/16 |
| 223 | 3.1.2.2.9.1 | Fit Up | 8d | 2021-11-21 | 2021-11-28 | 195 | 2021-12-09 | 2021-12-16 | 8d | 221.2d | 0d | 01/02/21 | 01/02/29 | 100/8/30 | 100/9/7 |
| 224 | 3.1.2.2.9.2 | Welding | 10d | 2021-11-22 | 2021-12-01 | 223SS+1d | 2021-12-10 | 2021-12-19 | 10d | 221.2d | 0d | 01/02/22 | 01/03/01 | 100/9/1 | 100/9/10 |
| 225 | 3.1.2.2.9.3 | NDT | 2d | 2021-12-02 | 2021-12-03 | 224 | 2021-12-20 | 2021-12-21 | 2d | 221.2d | 0d | 01/03/01 | 01/03/03 | 100/9/11 | 100/9/12 |
| 226 | 3.1.2.2.9.4 | Pneumatic Test | 2d | 2021-12-04 | 2021-12-05 | 225 | 2021-12-22 | 2021-12-23 | 2d | 221.2d | 0d | 01/03/03 | 01/03/05 | 100/9/13 | 100/9/14 |
| 227 | 3.1.2.2.9.5 | Certificate | 2d | 2021-12-06 | 2021-12-07 | 226 | 2021-12-24 | 2021-12-25 | 2d | 221.2d | 42d | 01/03/05 | 01/03/07 | 100/9/15 | 100/9/16 |
| 228 | 3.1.2.2.10 | **Venturi for X-Over System** | 8d | 2021-11-21 | 2021-11-28 |  | 2021-12-09 | 2021-12-16 | 8d | 186.2d |  | 01/02/21 | 01/02/29 | 100/8/30 | 100/9/7 |
| 229 | 3.1.2.2.10.1 | Installation | 6d | 2021-11-21 | 2021-11-26 | 209SS | 2021-12-09 | 2021-12-14 | 6d | 186.2d | 0d | 01/02/21 | 01/02/27 | 100/8/30 | 100/9/5 |
| 230 | 3.1.2.2.10.2 | Certificate | 2d | 2021-11-27 | 2021-11-28 | 229 | 2021-12-15 | 2021-12-16 | 2d | 186.2d | 15d | 01/02/27 | 01/02/29 | 100/9/6 | 100/9/7 |
| 231 | 3.1.2.2.11 | **Camsockets** | 14d | 2022-01-05 | 2022-01-18 |  | 2022-01-23 | 2022-02-05 | 14d | 179.2d |  | 01/04/04 | 01/04/18 | 100/10/15 | 100/10/28 |
| 232 | 3.1.2.2.11.1 | Installation | 8d | 2022-01-05 | 2022-01-12 | 118 | 2022-01-23 | 2022-01-30 | 8d | 179.2d | 0d | 01/04/04 | 01/04/12 | 100/10/15 | 100/10/22 |
| 233 | 3.1.2.2.11.2 | Full Bolt & Tightening | 4d | 2022-01-13 | 2022-01-16 | 232 | 2022-01-31 | 2022-02-03 | 4d | 179.2d | 0d | 01/04/12 | 01/04/16 | 100/10/23 | 100/10/26 |
| 234 | 3.1.2.2.11.3 | Certificate | 2d | 2022-01-17 | 2022-01-18 | 233 | 2022-02-04 | 2022-02-05 | 2d | 179.2d | 0d | 01/04/16 | 01/04/18 | 100/10/27 | 100/10/28 |
| 235 | 3.1.2.2.12 | **Brackets** | 6d | 2021-10-22 | 2021-10-27 |  | 2021-11-09 | 2021-11-14 | 6d | 43.95d |  | 01/01/22 | 01/01/28 | 100/7/30 | 100/8/5 |
| 236 | 3.1.2.2.12.1 | Installation | 2d | 2021-10-22 | 2021-10-23 |  | 2021-11-09 | 2021-11-10 | 2d | 43.95d | 0d | 01/01/22 | 01/01/24 | 100/7/30 | 100/8/1 |
| 237 | 3.1.2.2.12.2 | Full Bolt & Tightening | 2d | 2021-10-24 | 2021-10-25 | 236 | 2021-11-11 | 2021-11-12 | 2d | 43.95d | 0d | 01/01/24 | 01/01/26 | 100/8/2 | 100/8/3 |
| 238 | 3.1.2.2.12.3 | Certificate | 2d | 2021-10-26 | 2021-10-27 | 237 | 2021-11-13 | 2021-11-14 | 2d | 43.95d | 0d | 01/01/26 | 01/01/28 | 100/8/4 | 100/8/5 |

| ID | WBS | Task | Duration | Start | Finish | Predecessors | Complete | Remaining | Baseline start | Baseline finish | Baseline duration | Total slack | Free slack | per | Text2 | Persian Start | Persian Finish |
| --- | --- | --- | --- | --- | --- | --- | --- | --- | --- | --- | --- | --- | --- | --- | --- | --- | --- |
| 239 | 3.1.2.2.13 | **Common Part** | 6d | 2021-12-14 | 2021-12-19 |  |  |  | 2022-01-01 | 2022-01-06 | 6d | 171.2d |  | 01/03/13 | 01/03/19 | 100/9/23 | 100/9/28 |
| 240 | 3.1.2.2.13.1 | Installation | 4d | 2021-12-14 | 2021-12-17 | 214, 230 |  |  | 2022-01-01 | 2022-01-04 | 4d | 171.2d | 0d | 01/03/13 | 01/03/17 | 100/9/23 | 100/9/26 |
| 241 | 3.1.2.2.13.2 | Certificate | 2d | 2021-12-18 | 2021-12-19 | 240 |  |  | 2022-01-05 | 2022-01-06 | 2d | 171.2d | 0d | 01/03/17 | 01/03/19 | 100/9/27 | 100/9/28 |
| 242 | 3.1.2.3 | **Spring Supports** | 16d | 2021-12-14 | 2021-12-29 |  |  |  | 2022-01-01 | 2022-01-16 | 16d | 43.95d |  | 01/03/13 | 01/03/29 | 100/9/23 | 100/10/8 |
| 243 | 3.1.2.3.1 | **Constant Spring Supports & Hanger Tie-Rods** | 16d | 2021-12-14 | 2021-12-29 |  |  |  | 2022-01-01 | 2022-01-16 | 16d | 43.95d |  | 01/03/13 | 01/03/29 | 100/9/23 | 100/10/8 |
| 244 | 3.1.2.3.1.1 | Installation | 10d | 2021-12-14 | 2021-12-23 | 188, 214 |  |  | 2022-01-01 | 2022-01-10 | 10d | 43.95d | 0d | 01/03/13 | 01/03/23 | 100/9/23 | 100/10/2 |
| 245 | 3.1.2.3.1.2 | Full Bolt & Tightening | 4d | 2021-12-24 | 2021-12-27 | 244 |  |  | 2022-01-11 | 2022-01-14 | 4d | 43.95d | 0d | 01/03/23 | 01/03/27 | 100/10/3 | 100/10/6 |
| 246 | 3.1.2.3.1.3 | Certificate | 2d | 2021-12-28 | 2021-12-29 | 245 |  |  | 2022-01-15 | 2022-01-16 | 2d | 43.95d | 20d | 01/03/27 | 01/03/29 | 100/10/7 | 100/10/8 |
| 247 | 3.1.3 | **Furnace Equipment** | 136.2d | 2021-11-11 A | 2022-03-27 |  | 19% | 110.78d | 2021-09-03 | 2022-02-08 | 159d | 112d |  | 00/11/14 | 01/04/21 | 100/8/20 | 101/1/7 |
| 248 | 3.1.3.1 | **Bottom Burners** | 22d | 2021-11-11 | 2021-12-02 |  |  |  | 2021-12-19 | 2022-01-09 | 22d | 226.2d |  | 01/02/31 | 01/03/22 | 100/8/20 | 100/9/11 |
| 249 | 3.1.3.1.1 | Installation | 8d | 2021-11-11 | 2021-11-18 | 188 |  |  | 2021-12-19 | 2021-12-26 | 8d | 226.2d | 0d | 01/02/31 | 01/03/08 | 100/8/20 | 100/8/27 |
| 250 | 3.1.3.1.2 | Other Accessories Installation | 4d | 2021-11-19 | 2021-11-22 | 249 |  |  | 2021-12-27 | 2021-12-30 | 4d | 226.2d | 0d | 01/03/08 | 01/03/12 | 100/8/28 | 100/9/1 |
| 251 | 3.1.3.1.3 | Full Bolt & Tightening | 4d | 2021-11-23 | 2021-11-26 | 250 |  |  | 2021-12-31 | 2022-01-03 | 4d | 226.2d | 0d | 01/03/12 | 01/03/16 | 100/9/2 | 100/9/5 |
| 252 | 3.1.3.1.4 | Mechanical Cleaning | 4d | 2021-11-27 | 2021-11-30 | 251 |  |  | 2022-01-04 | 2022-01-07 | 4d | 226.2d | 0d | 01/03/16 | 01/03/20 | 100/9/6 | 100/9/9 |
| 253 | 3.1.3.1.5 | Certificate | 2d | 2021-12-01 | 2021-12-02 | 252 |  |  | 2022-01-08 | 2022-01-09 | 2d | 226.2d | 114.2d | 01/03/20 | 01/03/22 | 100/9/10 | 100/9/11 |
| 254 | 3.1.3.2 | **Side Wall Burners** | 22d | 2021-11-11 | 2021-12-02 |  |  |  | 2021-12-19 | 2022-01-09 | 22d | 226.2d |  | 01/02/31 | 01/03/22 | 100/8/20 | 100/9/11 |
| 255 | 3.1.3.2.1 | Installation | 8d | 2021-11-11 | 2021-11-18 | 188 |  |  | 2021-12-19 | 2021-12-26 | 8d | 226.2d | 0d | 01/02/31 | 01/03/08 | 100/8/20 | 100/8/27 |
| 256 | 3.1.3.2.2 | Other Accessories Installation | 4d | 2021-11-19 | 2021-11-22 | 255 |  |  | 2021-12-27 | 2021-12-30 | 4d | 226.2d | 0d | 01/03/08 | 01/03/12 | 100/8/28 | 100/9/1 |
| 257 | 3.1.3.2.3 | Full Bolt & Tightening | 4d | 2021-11-23 | 2021-11-26 | 256 |  |  | 2021-12-31 | 2022-01-03 | 4d | 226.2d | 0d | 01/03/12 | 01/03/16 | 100/9/2 | 100/9/5 |
| 258 | 3.1.3.2.4 | Mechanical Cleaning | 4d | 2021-11-27 | 2021-11-30 | 257 |  |  | 2022-01-04 | 2022-01-07 | 4d | 226.2d | 0d | 01/03/16 | 01/03/20 | 100/9/6 | 100/9/9 |
| 259 | 3.1.3.2.5 | Certificate | 2d | 2021-12-01 | 2021-12-02 | 258 |  |  | 2022-01-08 | 2022-01-09 | 2d | 226.2d | 114.2d | 01/03/20 | 01/03/22 | 100/9/10 | 100/9/11 |
| 260 | 3.1.3.3 | **Primary TLE (E-110A)** | 10d | 2022-02-14 A | 2022-02-24 |  | 60% | 4d | 2021-09-14 | 2021-09-23 | 10d | 42d |  | 00/11/25 | 00/12/05 | 100/11/25 | 100/12/5 |
| 261 | 3.1.3.3.1 | Installation | 2d | 2022-02-14 A | 2022-02-16 A | 107, 113, 143, 149 | 100% |  | 2021-09-14 | 2021-09-15 | 2d |  |  | 00/11/25 | 00/11/27 | 100/11/25 | 100/11/27 |
| 262 | 3.1.3.3.2 | Leveling & Plumbness | 2d | 2022-02-16 A | 2022-02-18 A | 261 | 100% |  | 2021-09-16 | 2021-09-17 | 2d |  |  | 00/11/27 | 00/11/29 | 100/11/27 | 100/11/29 |
| 263 | 3.1.3.3.3 | Full Bolt & Tightening | 2d | 2022-02-18 A | 2022-02-20 A | 262 | 100% |  | 2021-09-18 | 2021-09-19 | 2d |  |  | 00/11/29 | 00/12/01 | 100/11/29 | 100/12/1 |
| 264 | 3.1.3.3.4 | Mechanical Pneumatic Test and Cleaning | 2d | 2022-02-20 | 2022-02-22 | 263 |  |  | 2021-09-20 | 2021-09-21 | 2d | 42d | 0d | 00/12/01 | 00/12/03 | 100/12/1 | 100/12/3 |
| 265 | 3.1.3.3.5 | Certificate | 2d | 2022-02-22 | 2022-02-24 | 264 |  |  | 2021-09-22 | 2021-09-23 | 2d | 42d | 0d | 00/12/03 | 00/12/05 | 100/12/3 | 100/12/5 |

| ID | WBS | Task | Duration | Start | Finish | Predecessors | Complete | Remaining | Baseline start | Baseline finish | Baseline duration | Total slack | Free slack | per | Text2 | Persian Start | Persian Finish |
| --- | --- | --- | --- | --- | --- | --- | --- | --- | --- | --- | --- | --- | --- | --- | --- | --- | --- |
| 266 | 3.1.3.4 | **Primary TLE (E-110B)** | 10d | 2022-02-14 A | 2022-02-24 |  | 60% | 4d | 2021-09-14 | 2021-09-23 | 10d | 42d |  | 00/11/25 | 00/12/05 | 100/11/25 | 100/12/5 |
| 267 | 3.1.3.4.1 | Installation | 2d | 2022-02-14 A | 2022-02-16 A | 107, 113, 143, 149 | 100% |  | 2021-09-14 | 2021-09-15 | 2d |  |  | 00/11/25 | 00/11/27 | 100/11/25 | 100/11/27 |
| 268 | 3.1.3.4.2 | Leveling & Plumbness | 2d | 2022-02-16 A | 2022-02-18 A | 267 | 100% |  | 2021-09-16 | 2021-09-17 | 2d |  |  | 00/11/27 | 00/11/29 | 100/11/27 | 100/11/29 |
| 269 | 3.1.3.4.3 | Full Bolt & Tightening | 2d | 2022-02-18 A | 2022-02-20 A | 268 | 100% |  | 2021-09-18 | 2021-09-19 | 2d |  |  | 00/11/29 | 00/12/01 | 100/11/29 | 100/12/1 |
| 270 | 3.1.3.4.4 | Mechanical Pneumatic Test and Cleaning | 2d | 2022-02-20 | 2022-02-22 | 269 |  |  | 2021-09-20 | 2021-09-21 | 2d | 42d | 0d | 00/12/01 | 00/12/03 | 100/12/1 | 100/12/3 |
| 271 | 3.1.3.4.5 | Certificate | 2d | 2022-02-22 | 2022-02-24 | 270 |  |  | 2021-09-22 | 2021-09-23 | 2d | 42d | 0d | 00/12/03 | 00/12/05 | 100/12/3 | 100/12/5 |
| 272 | 3.1.3.5 | **Primary TLE (E-110C)** | 10d | 2022-02-14 A | 2022-02-24 |  | 60% | 4d | 2021-09-14 | 2021-09-23 | 10d | 42d |  | 00/11/25 | 00/12/05 | 100/11/25 | 100/12/5 |
| 273 | 3.1.3.5.1 | Installation | 2d | 2022-02-14 A | 2022-02-16 A | 107, 113, 143, 149 | 100% |  | 2021-09-14 | 2021-09-15 | 2d |  |  | 00/11/25 | 00/11/27 | 100/11/25 | 100/11/27 |
| 274 | 3.1.3.5.2 | Leveling & Plumbness | 2d | 2022-02-16 A | 2022-02-18 A | 273 | 100% |  | 2021-09-16 | 2021-09-17 | 2d |  |  | 00/11/27 | 00/11/29 | 100/11/27 | 100/11/29 |
| 275 | 3.1.3.5.3 | Full Bolt & Tightening | 2d | 2022-02-18 A | 2022-02-20 A | 274 | 100% |  | 2021-09-18 | 2021-09-19 | 2d |  |  | 00/11/29 | 00/12/01 | 100/11/29 | 100/12/1 |
| 276 | 3.1.3.5.4 | Mechanical Pneumatic Test and Cleaning | 2d | 2022-02-20 | 2022-02-22 | 275 |  |  | 2021-09-20 | 2021-09-21 | 2d | 42d | 0d | 00/12/01 | 00/12/03 | 100/12/1 | 100/12/3 |
| 277 | 3.1.3.5.5 | Certificate | 2d | 2022-02-22 | 2022-02-24 | 276 |  |  | 2021-09-22 | 2021-09-23 | 2d | 42d | 0d | 00/12/03 | 00/12/05 | 100/12/3 | 100/12/5 |
| 278 | 3.1.3.6 | **Secondary TLE (E-1110)** | 12d | 2022-02-03 A | 2022-02-15 |  | 42% | 7d | 2021-09-03 | 2021-09-14 | 12d | 51d |  | 00/11/14 | 00/11/26 | 100/11/14 | 100/11/26 |
| 279 | 3.1.3.6.1 | Installation | 2d | 2022-02-03 A | 2022-02-05 A | 149 | 100% |  | 2021-09-03 | 2021-09-04 | 2d |  |  | 00/11/14 | 00/11/16 | 100/11/14 | 100/11/16 |
| 280 | 3.1.3.6.2 | Leveling & Plumbness | 2d | 2022-02-05 A | 2022-02-07 A | 279 | 100% |  | 2021-09-05 | 2021-09-06 | 2d |  |  | 00/11/16 | 00/11/18 | 100/11/16 | 100/11/18 |
| 281 | 3.1.3.6.3 | Full Bolt & Tightening | 2d | 2022-02-07 A | 2022-02-09 | 280 | 50% | 1d | 2021-09-07 | 2021-09-08 | 2d | 51d | 0d | 00/11/18 | 00/11/20 | 100/11/18 | 100/11/20 |
| 282 | 3.1.3.6.4 | Mechanical Pneumatic Test and Cleaning | 2d | 2022-02-09 | 2022-02-11 | 281 |  |  | 2021-09-09 | 2021-09-10 | 2d | 51d | 0d | 00/11/20 | 00/11/22 | 100/11/20 | 100/11/22 |
| 283 | 3.1.3.6.5 | Box-Up | 2d | 2022-02-11 | 2022-02-13 | 282 |  |  | 2021-09-11 | 2021-09-12 | 2d | 51d | 0d | 00/11/22 | 00/11/24 | 100/11/22 | 100/11/24 |
| 284 | 3.1.3.6.6 | Certificate | 2d | 2022-02-13 | 2022-02-15 | 283 |  |  | 2021-09-13 | 2021-09-14 | 2d | 51d | 9d | 00/11/24 | 00/11/26 | 100/11/24 | 100/11/26 |
| 285 | 3.1.3.7 | **Tertiary TLE (E-1210)** | 12d | 2022-02-03 A | 2022-02-15 |  | 42% | 7d | 2021-09-03 | 2021-09-14 | 12d | 51d |  | 00/11/14 | 00/11/26 | 100/11/14 | 100/11/26 |
| 286 | 3.1.3.7.1 | Installation | 2d | 2022-02-03 A | 2022-02-05 A | 149 | 100% |  | 2021-09-03 | 2021-09-04 | 2d |  |  | 00/11/14 | 00/11/16 | 100/11/14 | 100/11/16 |
| 287 | 3.1.3.7.2 | Leveling & Plumbness | 2d | 2022-02-05 A | 2022-02-07 A | 286 | 100% |  | 2021-09-05 | 2021-09-06 | 2d |  |  | 00/11/16 | 00/11/18 | 100/11/16 | 100/11/18 |
| 288 | 3.1.3.7.3 | Full Bolt & Tightening | 2d | 2022-02-07 A | 2022-02-09 | 287 | 50% | 1d | 2021-09-07 | 2021-09-08 | 2d | 51d | 0d | 00/11/18 | 00/11/20 | 100/11/18 | 100/11/20 |
| 289 | 3.1.3.7.4 | Mechanical Pneumatic Test and Cleaning | 2d | 2022-02-09 | 2022-02-11 | 288 |  |  | 2021-09-09 | 2021-09-10 | 2d | 51d | 0d | 00/11/20 | 00/11/22 | 100/11/20 | 100/11/22 |
| 290 | 3.1.3.7.5 | Box-Up | 2d | 2022-02-11 | 2022-02-13 | 289 |  |  | 2021-09-11 | 2021-09-12 | 2d | 51d | 0d | 00/11/22 | 00/11/24 | 100/11/22 | 100/11/24 |
| 291 | 3.1.3.7.6 | Certificate | 2d | 2022-02-13 | 2022-02-15 | 290 |  |  | 2021-09-13 | 2021-09-14 | 2d | 51d | 0d | 00/11/24 | 00/11/26 | 100/11/24 | 100/11/26 |

| ID | WBS | Task | Duration | Start | Finish | Predecessors | Baseline start | Baseline finish | Baseline duration | Total slack | Free slack | per | Text2 | Persian Start | Persian Finish |
| --- | --- | --- | --- | --- | --- | --- | --- | --- | --- | --- | --- | --- | --- | --- | --- |
| 292 | 3.1.3.8 | **Decoke Drum (D-110)B** | 12d | 2022-02-15 | 2022-02-27 |  | 2021-09-15 | 2021-09-26 | 12d | 112d |  | 00/11/26 | 00/12/08 | 100/11/26 | 100/12/8 |
| 293 | 3.1.3.8.1 | Installation | 2d | 2022-02-15 | 2022-02-17 | 291 | 2021-09-15 | 2021-09-16 | 2d | 112d | 0d | 00/11/26 | 00/11/28 | 100/11/26 | 100/11/28 |
| 294 | 3.1.3.8.2 | Leveling & Plumbness | 4d | 2022-02-17 | 2022-02-21 | 293 | 2021-09-17 | 2021-09-20 | 4d | 112d | 0d | 00/11/28 | 00/12/02 | 100/11/28 | 100/12/2 |
| 295 | 3.1.3.8.3 | Full Bolt & Tightening | 4d | 2022-02-21 | 2022-02-25 | 294 | 2021-09-21 | 2021-09-24 | 4d | 112d | 0d | 00/12/02 | 00/12/06 | 100/12/2 | 100/12/6 |
| 296 | 3.1.3.8.4 | Certificate | 2d | 2022-02-25 | 2022-02-27 | 295 | 2021-09-25 | 2021-09-26 | 2d | 112d | 0d | 00/12/06 | 00/12/08 | 100/12/6 | 100/12/8 |
| 297 | 3.1.3.9 | **steam drum(D-110)** | 12d | 2022-02-27 | 2022-03-11 |  | 2021-09-27 | 2021-10-08 | 12d | 112d |  | 00/12/08 | 00/12/20 | 100/12/8 | 100/12/20 |
| 298 | 3.1.3.9.1 | Installation | 2d | 2022-02-27 | 2022-03-01 | 296 | 2021-09-27 | 2021-09-28 | 2d | 112d | 0d | 00/12/08 | 00/12/10 | 100/12/8 | 100/12/10 |
| 299 | 3.1.3.9.2 | Leveling & Plumbness | 4d | 2022-03-01 | 2022-03-05 | 298 | 2021-09-29 | 2021-10-02 | 4d | 112d | 0d | 00/12/10 | 00/12/14 | 100/12/10 | 100/12/14 |
| 300 | 3.1.3.9.3 | Full Bolt & Tightening | 4d | 2022-03-05 | 2022-03-09 | 299 | 2021-10-03 | 2021-10-06 | 4d | 112d | 0d | 00/12/14 | 00/12/18 | 100/12/14 | 100/12/18 |
| 301 | 3.1.3.9.4 | Certificate | 2d | 2022-03-09 | 2022-03-11 | 300 | 2021-10-07 | 2021-10-08 | 2d | 112d | 0d | 00/12/18 | 00/12/20 | 100/12/18 | 100/12/20 |
| 302 | 3.1.3.10 | **VHP Steam Silencer (X-1110)** | 8d | 2022-03-11 | 2022-03-19 |  | 2021-10-09 | 2021-10-16 | 8d | 112d |  | 00/12/20 | 00/12/28 | 100/12/20 | 100/12/28 |
| 303 | 3.1.3.10.1 | Installation | 2d | 2022-03-11 | 2022-03-13 | 301 | 2021-10-09 | 2021-10-10 | 2d | 112d | 0d | 00/12/20 | 00/12/22 | 100/12/20 | 100/12/22 |
| 304 | 3.1.3.10.2 | Leveling & Plumbness | 2d | 2022-03-13 | 2022-03-15 | 303 | 2021-10-11 | 2021-10-12 | 2d | 112d | 0d | 00/12/22 | 00/12/24 | 100/12/22 | 100/12/24 |
| 305 | 3.1.3.10.3 | Full Bolt & Tightening | 2d | 2022-03-15 | 2022-03-17 | 304 | 2021-10-13 | 2021-10-14 | 2d | 112d | 0d | 00/12/24 | 00/12/26 | 100/12/24 | 100/12/26 |
| 306 | 3.1.3.10.4 | Certificate | 2d | 2022-03-17 | 2022-03-19 | 305 | 2021-10-15 | 2021-10-16 | 2d | 112d | 0d | 00/12/26 | 00/12/28 | 100/12/26 | 100/12/28 |
| 307 | 3.1.3.11 | **Decoke Air Silencer** | 8d | 2022-03-19 | 2022-03-27 |  | 2021-10-17 | 2021-10-24 | 8d | 112d |  | 00/12/28 | 01/01/07 | 100/12/28 | 101/1/7 |
| 308 | 3.1.3.11.1 | Installation | 2d | 2022-03-19 | 2022-03-21 | 306 | 2021-10-17 | 2021-10-18 | 2d | 112d | 0d | 00/12/28 | 01/01/01 | 100/12/28 | 101/1/1 |
| 309 | 3.1.3.11.2 | Leveling & Plumbness | 2d | 2022-03-21 | 2022-03-23 | 308 | 2021-10-19 | 2021-10-20 | 2d | 112d | 0d | 01/01/01 | 01/01/03 | 101/1/1 | 101/1/3 |
| 310 | 3.1.3.11.3 | Full Bolt & Tightening | 2d | 2022-03-23 | 2022-03-25 | 309 | 2021-10-21 | 2021-10-22 | 2d | 112d | 0d | 01/01/03 | 01/01/05 | 101/1/3 | 101/1/5 |
| 311 | 3.1.3.11.4 | Certificate | 2d | 2022-03-25 | 2022-03-27 | 310 | 2021-10-23 | 2021-10-24 | 2d | 112d | 0d | 01/01/05 | 01/01/07 | 101/1/5 | 101/1/7 |
| 312 | 3.1.3.12 | **Induced Draft Fan (C-110)** | 12d | 2022-01-10 | 2022-01-21 |  | 2022-01-28 | 2022-02-08 | 12d | 171.2d |  | 01/04/09 | 01/04/21 | 100/10/20 | 100/11/1 |
| 313 | 3.1.3.12.1 | Installation | 2d | 2022-01-10 | 2022-01-11 | 130 | 2022-01-28 | 2022-01-29 | 2d | 171.2d | 0d | 01/04/09 | 01/04/11 | 100/10/20 | 100/10/21 |
| 314 | 3.1.3.12.2 | Leveling | 2d | 2022-01-12 | 2022-01-13 | 313 | 2022-01-30 | 2022-01-31 | 2d | 171.2d | 0d | 01/04/11 | 01/04/13 | 100/10/22 | 100/10/23 |
| 315 | 3.1.3.12.3 | Full Bolt & Tightening | 2d | 2022-01-14 | 2022-01-15 | 314 | 2022-02-01 | 2022-02-02 | 2d | 171.2d | 0d | 01/04/13 | 01/04/15 | 100/10/24 | 100/10/25 |
| 316 | 3.1.3.12.4 | Final Alignment and Coupling | 2d | 2022-01-16 | 2022-01-17 | 315 | 2022-02-03 | 2022-02-04 | 2d | 171.2d | 0d | 01/04/15 | 01/04/17 | 100/10/26 | 100/10/27 |
| 317 | 3.1.3.12.5 | Mechanical Test Running | 2d | 2022-01-18 | 2022-01-19 | 316 | 2022-02-05 | 2022-02-06 | 2d | 171.2d | 0d | 01/04/17 | 01/04/19 | 100/10/28 | 100/10/29 |
| 318 | 3.1.3.12.6 | Certificate | 2d | 2022-01-20 | 2022-01-21 | 317 | 2022-02-07 | 2022-02-08 | 2d | 171.2d | 0d | 01/04/19 | 01/04/21 | 100/10/30 | 100/11/1 |

| ID | WBS | Task | Duration | Start | Finish | Predecessors | Complete | Remaining | Baseline start | Baseline finish | Baseline duration | Total slack | Free slack | per | Text2 | Persian Start | Persian Finish |
| --- | --- | --- | --- | --- | --- | --- | --- | --- | --- | --- | --- | --- | --- | --- | --- | --- | --- |
| 319 | 3.1.4 | **Refractory Linings & Insulating Firebricks** | 158d | 2022-02-11 A | 2022-07-19 |  | 3% | 154.01d | 2021-07-29 | 2021-11-28 | 123d | 0d |  | 00/10/08 | 01/02/11 | 100/11/22 | 101/4/28 |
| 320 | 3.1.4.1 | Radiant Floor | 15d | 2022-02-11 A | 2022-02-26 | 108, 246 | 5% | 14.25d |  |  |  | 143d |  |  |  | 100/11/22 | 100/12/7 |
| 321 | 3.1.4.2 | Radiant Side Wall And South End Wall | 45d | 2022-02-11 A | 2022-03-28 | 108 | 10% | 40.5d |  |  |  | 0d |  |  |  | 100/11/22 | 101/1/8 |
| 322 | 3.1.4.3 | Radiant North End Wall | 15d | 2022-03-28 | 2022-04-12 | 321, 246 |  |  |  |  |  | 78d | 0d |  |  | 101/1/8 | 101/1/23 |
| 323 | 3.1.4.4 | Radiant Roof And Sadow Box | 20d | 2022-04-12 | 2022-05-02 | 322, 246 |  |  |  |  |  | 78d |  |  |  | 101/1/23 | 101/2/12 |
| 324 | 3.1.4.5 | Cross Over Floor | 16d | 2022-03-28 | 2022-04-13 | 321 |  |  |  |  |  | 0d |  |  |  | 101/1/8 | 101/1/24 |
| 325 | 3.1.4.6 | Cross Over Side Wall And South End Wall | 25d | 2022-04-13 | 2022-05-08 | 324 |  |  |  |  |  | 0d |  |  |  | 101/1/24 | 101/2/18 |
| 326 | 3.1.4.7 | Cross Over Roof | 15d | 2022-05-08 | 2022-05-23 | 325 |  |  |  |  |  | 0d |  |  |  | 101/2/18 | 101/3/2 |
| 327 | 3.1.4.8 | Convection Saide Wall | 20d | 2022-05-23 | 2022-06-12 | 326 |  |  |  |  |  | 0d |  |  |  | 101/3/2 | 101/3/22 |
| 328 | 3.1.4.9 | Header Box | 15d | 2022-06-12 | 2022-06-27 | 327 |  |  |  |  |  | 0d |  |  |  | 101/3/22 | 101/4/6 |
| 329 | 3.1.4.10 | Breeching | 12d | 2022-06-27 | 2022-07-09 | 328 |  |  |  |  |  | 0d |  |  |  | 101/4/6 | 101/4/18 |
| 330 | 3.1.4.11 | Shadow Box | 10d | 2022-07-09 | 2022-07-19 | 329, 246 |  |  |  |  |  | 0d |  |  |  | 101/4/18 | 101/4/28 |
| 331 | 3.1.5 | **Protrusion Seals** | 10d | 2021-12-03 | 2021-12-12 |  |  |  | 2022-01-10 | 2022-01-19 | 10d | 216.2d |  | 01/03/22 | 01/04/01 | 100/9/12 | 100/9/21 |
| 332 | 3.1.5.1 | **Protrusion Seals Installation** | 10d | 2021-12-03 | 2021-12-12 |  |  |  | 2022-01-10 | 2022-01-19 | 10d | 216.2d |  | 01/03/22 | 01/04/01 | 100/9/12 | 100/9/21 |
| 333 | 3.1.5.1.1 | Multi Tube Bellow (End Location) | 8d | 2021-12-03 | 2021-12-10 | 42 |  |  | 2022-01-10 | 2022-01-17 | 8d | 216.2d | 0d | 01/03/22 | 01/03/30 | 100/9/12 | 100/9/19 |
| 334 | 3.1.5.1.2 | Multi Tube Bellow (Intermediate Location) | 8d | 2021-12-03 | 2021-12-10 | 42 |  |  | 2022-01-10 | 2022-01-17 | 8d | 216.2d | 0d | 01/03/22 | 01/03/30 | 100/9/12 | 100/9/19 |
| 335 | 3.1.5.1.3 | Spring Joint (Hanger Tubes Through Arch) | 8d | 2021-12-03 | 2021-12-10 | 42 |  |  | 2022-01-10 | 2022-01-17 | 8d | 216.2d | 0d | 01/03/22 | 01/03/30 | 100/9/12 | 100/9/19 |
| 336 | 3.1.5.1.4 | Spring Joint (Guide Tube Through Floor) | 8d | 2021-12-03 | 2021-12-10 | 42 |  |  | 2022-01-10 | 2022-01-17 | 8d | 216.2d | 0d | 01/03/22 | 01/03/30 | 100/9/12 | 100/9/19 |
| 337 | 3.1.5.1.5 | CRF Rope (Outlet Tubes) | 8d | 2021-12-03 | 2021-12-10 | 42 |  |  | 2022-01-10 | 2022-01-17 | 8d | 216.2d | 0d | 01/03/22 | 01/03/30 | 100/9/12 | 100/9/19 |
| 338 | 3.1.5.1.6 | Certificate | 2d | 2021-12-11 | 2021-12-12 | 333, 334, 335, 336, 337 |  |  | 2022-01-18 | 2022-01-19 | 2d | 216.2d | 0d | 01/03/30 | 01/04/01 | 100/9/20 | 100/9/21 |
| 339 | 3.2 | **Stair House for F-110** | 63d | 2022-04-03 | 2022-06-05 |  |  |  | 2021-11-01 | 2022-01-02 | 63d | 42d |  | 01/01/14 | 01/03/15 | 101/1/14 | 101/3/15 |
| 340 | 3.2.1 | **5A+5C Stair House** | 44d | 2022-04-03 | 2022-05-17 |  |  |  | 2021-11-01 | 2021-12-14 | 44d | 42d |  | 01/01/14 | 01/02/27 | 101/1/14 | 101/2/27 |
| 341 | 3.2.1.1 | Chipping & Padding | 2d | 2022-04-03 | 2022-04-05 | 155, 160, 166, 170 |  |  | 2021-11-01 | 2021-11-02 | 2d | 42d | 0d | 01/01/14 | 01/01/16 | 101/1/14 | 101/1/16 |
| 342 | 3.2.1.2 | Installation | 22d | 2022-04-05 | 2022-04-27 | 341 |  |  | 2021-11-03 | 2021-11-24 | 22d | 42d | 0d | 01/01/16 | 01/02/07 | 101/1/16 | 101/2/7 |
| 343 | 3.2.1.3 | Leveling & Plumbness | 6d | 2022-04-27 | 2022-05-03 | 342 |  |  | 2021-11-25 | 2021-11-30 | 6d | 42d | 0d | 01/02/07 | 01/02/13 | 101/2/7 | 101/2/13 |
| 344 | 3.2.1.4 | Full Bolt & Tightening | 8d | 2022-05-03 | 2022-05-11 | 343 |  |  | 2021-12-01 | 2021-12-08 | 8d | 42d | 0d | 01/02/13 | 01/02/21 | 101/2/13 | 101/2/21 |
| 345 | 3.2.1.5 | Grouting | 2d | 2022-05-11 | 2022-05-13 | 344 |  |  | 2021-12-09 | 2021-12-10 | 2d | 42d | 0d | 01/02/21 | 01/02/23 | 101/2/21 | 101/2/23 |
| 346 | 3.2.1.6 | Touch Up | 2d | 2022-05-13 | 2022-05-15 | 345 |  |  | 2021-12-11 | 2021-12-12 | 2d | 42d | 0d | 01/02/23 | 01/02/25 | 101/2/23 | 101/2/25 |
| 347 | 3.2.1.7 | Certificate | 2d | 2022-05-15 | 2022-05-17 | 346 |  |  | 2021-12-13 | 2021-12-14 | 2d | 42d | 0d | 01/02/25 | 01/02/27 | 101/2/25 | 101/2/27 |

| ID | WBS | Task | Type | Duration | Start | Finish | Predecessors | Baseline start | Baseline finish | Baseline duration | Total slack | Free slack | per | Text2 | Persian Start | Persian Finish |
| --- | --- | --- | --- | --- | --- | --- | --- | --- | --- | --- | --- | --- | --- | --- | --- | --- |
| 348 | 3.2.2 | **5B+5D Handrail Stair** |  | 21d | 2022-05-15 | 2022-06-05 |  | 2021-12-13 | 2022-01-02 | 21d | 42d |  | 01/02/25 | 01/03/15 | 101/2/25 | 101/3/15 |
| 349 | 3.2.2.1 | Installation |  | 10d | 2022-05-15 | 2022-05-25 | 347SS | 2021-12-13 | 2021-12-22 | 10d | 42d | 0d | 01/02/25 | 01/03/04 | 101/2/25 | 101/3/4 |
| 350 | 3.2.2.2 | Tightening or Welding |  | 14d | 2022-05-16 | 2022-05-30 | 349SS+1d | 2021-12-14 | 2021-12-27 | 14d | 42d | 0d | 01/02/26 | 01/03/09 | 101/2/26 | 101/3/9 |
| 351 | 3.2.2.3 | Touch Up |  | 4d | 2022-05-30 | 2022-06-03 | 350 | 2021-12-28 | 2021-12-31 | 4d | 42d | 0d | 01/03/09 | 01/03/13 | 101/3/9 | 101/3/13 |
| 352 | 3.2.2.4 | Certificate |  | 2d | 2022-06-03 | 2022-06-05 | 351 | 2022-01-01 | 2022-01-02 | 2d | 42d | 0d | 01/03/13 | 01/03/15 | 101/3/13 | 101/3/15 |
| 353 | 3.2.3 | **5E Grating Stair** |  | 16d | 2022-05-15 | 2022-05-31 |  | 2021-12-13 | 2021-12-28 | 16d | 47d |  | 01/02/25 | 01/03/10 | 101/2/25 | 101/3/10 |
| 354 | 3.2.3.1 | Installation |  | 8d | 2022-05-15 | 2022-05-23 | 347SS | 2021-12-13 | 2021-12-20 | 8d | 47d | 0d | 01/02/25 | 01/03/02 | 101/2/25 | 101/3/2 |
| 355 | 3.2.3.2 | Tightening |  | 6d | 2022-05-23 | 2022-05-29 | 354 | 2021-12-21 | 2021-12-26 | 6d | 47d | 0d | 01/03/02 | 01/03/08 | 101/3/2 | 101/3/8 |
| 356 | 3.2.3.3 | Certificate |  | 2d | 2022-05-29 | 2022-05-31 | 355 | 2021-12-27 | 2021-12-28 | 2d | 47d | 5d | 01/03/08 | 01/03/10 | 101/3/8 | 101/3/10 |
| 357 | 3.3 | **inlet & outlet piping** |  | 60d | 2021-10-30 | 2021-12-28 |  | 2021-12-07 | 2022-02-04 | 60d | 200.2d |  | 01/02/19 | 01/04/17 | 100/8/8 | 100/10/7 |
| 358 | 3.3.1 | **piping from inlet header to furnace** |  | 60d | 2021-10-30 | 2021-12-28 |  | 2021-12-07 | 2022-02-04 | 60d | 200.2d |  | 01/02/19 | 01/04/17 | 100/8/8 | 100/10/7 |
| 359 | 3.3.1.1 | grinding & fitup& weiding in work shop |  | 20d | 2021-10-30 | 2021-11-18 | 175 | 2021-12-07 | 2021-12-26 | 20d | 200.2d | 0d | 01/02/19 | 01/03/08 | 100/8/8 | 100/8/27 |
| 360 | 3.3.1.2 | grinding & fitup& weiding in Location |  | 40d | 2021-11-19 | 2021-12-28 | 359 | 2021-12-27 | 2022-02-04 | 40d | 200.2d | 0d | 01/03/08 | 01/04/17 | 100/8/28 | 100/10/7 |
| 361 | 3.3.2 | **outlet piping from furnace to header** |  | 60d | 2021-10-30 | 2021-12-28 |  | 2021-12-07 | 2022-02-04 | 60d | 200.2d |  | 01/02/19 | 01/04/17 | 100/8/8 | 100/10/7 |
| 362 | 3.3.2.1 | grinding & fitup& weiding in work shop |  | 20d | 2021-10-30 | 2021-11-18 | 359SS | 2021-12-07 | 2021-12-26 | 20d | 240.2d | 40d | 01/02/19 | 01/03/08 | 100/8/8 | 100/8/27 |
| 363 | 3.3.2.2 | grinding & fitup& weiding in Location |  | 40d | 2021-11-19 | 2021-12-28 | 360SS | 2021-12-27 | 2022-02-04 | 40d | 200.2d | 0d | 01/03/08 | 01/04/17 | 100/8/28 | 100/10/7 |
| 364 | 3.4 | **Delivery of MC Book** |  | 176.2d | 2021-12-13 | 2022-06-07 |  | 2022-01-03 | 2022-02-15 | 44d | 42d |  | 01/03/15 | 01/04/28 | 100/9/22 | 101/3/17 |
| 365 | 3.4.1 | **F-110** |  | 155.2d | 2021-12-13 | 2022-05-17 |  | 2022-01-20 | 2022-02-15 | 27d | 63d |  | 01/04/01 | 01/04/28 | 100/9/22 | 101/2/27 |
| 366 | 3.4.1.1 | Furnace Structural Steel (Plate & Steel) |  | 2d | 2022-05-15 | 2022-05-17 | 11, 19, 27, 32, 37, 42, 47, 56, 62, 68, 74, 80, 85, 91, 95, 101, 107, 113, 118, 123, 130, 136, 143, 149, 155, 160, 166, 170, 175, 179 | 2022-02-14 | 2022-02-15 | 2d | 63d | 21d | 01/04/26 | 01/04/28 | 101/2/25 | 101/2/27 |
| 367 | 3.4.1.2 | Furnace Coils System |  | 2d | 2022-01-19 | 2022-01-20 | 188, 192, 195, 198, 201, 204, 207, 214, 221, 227, 230, 234, 238, 241, 246 | 2022-02-06 | 2022-02-07 | 2d | 179.2d | 137.2d | 01/04/18 | 01/04/20 | 100/10/29 | 100/10/30 |
| 368 | 3.4.1.3 | Furnace Equipment |  | 2d | 2022-03-27 | 2022-03-29 | 253, 259, 265, 271, 277, 284, 291, 296, 306, 311, 318 | 2022-02-09 | 2022-02-10 | 2d | 112d | 70d | 01/04/21 | 01/04/23 | 101/1/7 | 101/1/9 |
| 369 | 3.4.1.4 | Refractory Linings & Insulating Firebricks |  | 2d | 2021-12-29 | 2021-12-30 | 362, 363 | 2022-02-05 | 2022-02-06 | 2d | 200.2d | 158.2d | 01/04/17 | 01/04/19 | 100/10/8 | 100/10/9 |
| 370 | 3.4.1.5 | Protrusion Seals |  | 2d | 2021-12-13 | 2021-12-14 | 338 | 2022-01-20 | 2022-01-21 | 2d | 216.2d | 174.2d | 01/04/01 | 01/04/03 | 100/9/22 | 100/9/23 |
| 371 | 3.4.2 | **Stair House for F-110** |  | 2d | 2022-06-05 | 2022-06-07 |  | 2022-01-03 | 2022-01-04 | 2d | 42d |  | 01/03/15 | 01/03/17 | 101/3/15 | 101/3/17 |
| 372 | 3.4.2.1 | Stair House for F-110 |  | 2d | 2022-06-05 | 2022-06-07 | 347, 352, 356 | 2022-01-03 | 2022-01-04 | 2d | 42d | 0d | 01/03/15 | 01/03/17 | 101/3/15 | 101/3/17 |
| 373 | 4 | Demobilization |  | 5d | 2022-06-02 | 2022-06-07 | 366FF, 367FF, 368FF, 369FF, 370FF, 372FF | 2022-02-11 | 2022-02-15 | 5d | 42d | 0d | 01/04/23 | 01/04/28 | 101/3/12 | 101/3/17 |
| 374 | 5 | FINISH | milestone | 0d | 2022-06-07 | 2022-06-07 | 373 | 2022-02-15 | 2022-02-15 | 0d | 42d |  | 01/04/28 | 01/04/28 | 101/3/17 | 101/3/17 |
